| id | org_id | project_id | unit_id | unit_code | schedule_id | step_code | name | work_category | week | order | weight | day_from | day_to | planned_start | planned_finish | wait_days | min_photos | checklist | tasks | assignee_role | assigned_to | verify_role | verifier_hint | status | evidence | note | history | started_at | submitted_at | submitted_by | verified_at | verified_by | verify_note | rework_count | late_days | escalation_level | task_id | created_at | updated_at | predecessors | hold_point | hold_note | gate_reasons | wait_reason | gate_ready_at | escalated_at | handover_gate | reminded_on |
| --- | --- | --- | --- | --- | --- | --- | --- | --- | --- | --- | --- | --- | --- | --- | --- | --- | --- | --- | --- | --- | --- | --- | --- | --- | --- | --- | --- | --- | --- | --- | --- | --- | --- | --- | --- | --- | --- | --- | --- | --- | --- | --- | --- | --- | --- | --- | --- | --- |
| df00385e-7fd4-42a8-97f6-cb8f3aa68dbf | org-sipro | 01278f79-6752-45dd-81ac-cab73938d8fc | 889a963f-f67c-4e07-8002-7726eb789351 | A-02 | 362ddef2-3246-4172-aabb-6d1451cf8809 | W1-01 | Pekerjaan persiapan (pembersihan, pengukuran, bowplank) | persiapan | 1 | 1 | 2.0 | 1 | 2 | 2026-08-22 | 2026-08-24 | 0 | 2 | W1-01-C1 As bangunan sesuai siteplan True pass, W1-01-C2 Elevasi lantai aman dari jalan & drainase True pass, W1-01-C3 Bowplank kuat, siku, dan tidak mudah bergeser  pass | Pembersihan lokasi, Pengukuran, Pemasangan bowplank | site_engineer | site@sipro.co.id | project_manager | pm@sipro.co.id | done | 22e32b9e-edd2-4357-9fd6-30bf1f4361b6 2087f9d0f1ccb45c85b0399500e01be5f711d64c5fba01b996a15d7375e6f091 contoh-w1-01-1.png image/jpeg 10917 seed 2026-09-05T19:55:48.620060+00:00 CONTOH · unit A-02 · Contoh bukti: Pekerjaan persiapan (pembersihan, pengukuran (  seed 2026-09-05T19:55:48.620641+00:00, 9392b2bb-2da6-40d3-8174-7feae01435ac 148822ba3d40c36f15f1276c368f4d7f4625b59a57176374371f885c1378994a contoh-w1-01-2.png image/jpeg 11400 seed 2026-09-05T19:55:48.708740+00:00 CONTOH · unit A-02 · Contoh bukti: Pekerjaan persiapan (pembersihan, pengukuran (  seed 2026-09-05T19:55:48.709211+00:00 | Data awal demo: pekerjaan dikerjakan sesuai checklist mutu; foto bukti berlabel CONTOH. | 2026-08-24T09:30:00+00:00 submit site@sipro.co.id Seed data awal 2, 2026-08-24T09:30:00+00:00 verify pm@sipro.co.id Seed data awal | 2026-08-22T01:00:00+00:00 | 2026-08-24T09:30:00+00:00 | site@sipro.co.id | 2026-08-24T09:30:00+00:00 | pm@sipro.co.id | Diverifikasi pada penyiapan data awal. | 0 | 0 | 0 | e3e1cd69-86c4-4cc8-a91b-b5a3a29da19e | 2026-09-05T19:55:48.494742+00:00 | 2026-09-05T19:55:48.709223+00:00 |  |  |  |  |  |  |  |  |  |
| 004d5f53-a9ea-47c5-86cb-dd914b827f68 | org-sipro | 01278f79-6752-45dd-81ac-cab73938d8fc | 889a963f-f67c-4e07-8002-7726eb789351 | A-02 | 362ddef2-3246-4172-aabb-6d1451cf8809 | W1-02 | Pekerjaan tanah & pondasi (galian, urugan pasir, batu belah) | struktur | 1 | 2 | 8.0 | 3 | 7 | 2026-08-25 | 2026-08-29 | 0 | 3 | W1-02-C1 Kedalaman & lebar galian sesuai gambar True pass, W1-02-C2 Urugan pasir dipadatkan dan rata  pass, W1-02-C3 Pasangan batu belah terkunci penuh, spesi mengisi rongga True pass, W1-02-C4 Tidak ada bagian pondasi yang menggantung/ambles True pass | Galian pondasi, Urugan pasir, Pasangan batu belah | site_engineer | site@sipro.co.id | project_manager | pm@sipro.co.id | done | 3ed9e898-14f4-4873-b019-1429b97a0ffc 417ca028cb60999276d45f71d0f497fe1eadec6f476b4da1b87fc6810cf7d584 contoh-w1-02-1.png image/jpeg 10858 seed 2026-09-05T19:55:48.809288+00:00 CONTOH · unit A-02 · Contoh bukti: Pekerjaan tanah & pondasi (galian, urugan pa (  seed 2026-09-05T19:55:48.809768+00:00, 401688bb-0540-489a-b9a8-9e463be21e05 4ba3ce24937ee86be3d0ca42b6270d9f1c54b1a5b2d72f20ed92f0227261c986 contoh-w1-02-2.png image/jpeg 11347 seed 2026-09-05T19:55:48.906351+00:00 CONTOH · unit A-02 · Contoh bukti: Pekerjaan tanah & pondasi (galian, urugan pa (  seed 2026-09-05T19:55:48.907131+00:00, af92e715-7739-4d27-96a6-35e6ab1a8ec7 803ae72abe0517fc38b74ff31efeddbc598586bc0f561d58be63bc6907980b0a contoh-w1-02-3.png image/jpeg 10965 seed 2026-09-05T19:55:49.002230+00:00 CONTOH · unit A-02 · Contoh bukti: Pekerjaan tanah & pondasi (galian, urugan pa (  seed 2026-09-05T19:55:49.002753+00:00 | Data awal demo: pekerjaan dikerjakan sesuai checklist mutu; foto bukti berlabel CONTOH. | 2026-08-29T09:30:00+00:00 submit site@sipro.co.id Seed data awal 3, 2026-08-29T09:30:00+00:00 verify pm@sipro.co.id Seed data awal | 2026-08-25T01:00:00+00:00 | 2026-08-29T09:30:00+00:00 | site@sipro.co.id | 2026-08-29T09:30:00+00:00 | pm@sipro.co.id | Diverifikasi pada penyiapan data awal. | 0 | 0 | 0 |  | 2026-09-05T19:55:48.494742+00:00 | 2026-09-05T19:55:49.002767+00:00 | W1-01 | True | HOLD POINT: tidak boleh lanjut sloof sebelum pondasi benar-benar terkunci (pasangan batu belah penuh, tidak ada rongga). | predecessor W1-01 'Pekerjaan persiapan (pembersihan, pengukuran, bowplank)' belum diverifikasi (status: blocked). |  |  |  |  |  |
| 71e1bb5f-3be6-4668-9667-66c0ef9f6f9c | org-sipro | 01278f79-6752-45dd-81ac-cab73938d8fc | 889a963f-f67c-4e07-8002-7726eb789351 | A-02 | 362ddef2-3246-4172-aabb-6d1451cf8809 | W2-01 | Pembesian & bekisting sloof + kolom praktis | struktur | 2 | 3 | 6.0 | 8 | 10 | 2026-08-31 | 2026-09-02 | 2 | 3 | W2-01-C1 Diameter & jumlah besi sesuai gambar True pending, W2-01-C2 Beton decking (selimut beton) terpasang True pending, W2-01-C3 Bekisting kokoh, lurus, tidak bocor  pending | Pembesian sloof, Pembesian kolom praktis, Pemasangan bekisting | site_engineer | site@sipro.co.id | project_manager | pm@sipro.co.id | ready |  |  |  |  |  |  |  |  |  | 0 | 3 | 2 | 6317513e-909c-4b47-b540-d2aee0a458dd | 2026-09-05T19:55:48.494742+00:00 | 2026-09-05T20:15:26.797464+00:00 | W1-02 |  |  |  | Pondasi batu kali minimal 1–2 hari sebelum sloof dikerjakan | 2026-08-31T09:30:00+00:00 | 2026-09-05T20:15:26.797464+00:00 |  |  |
| 620d1dda-517b-4c50-a259-0b67602ff6bf | org-sipro | 01278f79-6752-45dd-81ac-cab73938d8fc | 889a963f-f67c-4e07-8002-7726eb789351 | A-02 | 362ddef2-3246-4172-aabb-6d1451cf8809 | W2-02 | Pengecoran sloof, kolom praktis & talang beton | struktur | 2 | 4 | 6.0 | 11 | 11 | 2026-09-03 | 2026-09-03 | 0 | 2 | W2-02-C1 Mutu/slump beton sesuai spesifikasi True pending, W2-02-C2 Pengecoran padat, tidak keropos/segregasi True pending, W2-02-C3 Tanggal & jam pengecoran dicatat True pending | Pengecoran sloof, Pengecoran kolom praktis, Talang beton | site_engineer | site@sipro.co.id | project_manager | pm@sipro.co.id | blocked |  |  |  |  |  |  |  |  |  | 0 | 2 | 1 |  | 2026-09-05T19:55:48.494742+00:00 | 2026-09-05T20:15:26.805205+00:00 | W2-01 |  |  | predecessor W2-01 'Pembesian & bekisting sloof + kolom praktis' belum diverifikasi (status: ready). |  |  | 2026-09-05T20:15:26.805205+00:00 |  |  |
| a5ce4876-78b6-4e32-925d-558fdb60d4a2 | org-sipro | 01278f79-6752-45dd-81ac-cab73938d8fc | 889a963f-f67c-4e07-8002-7726eb789351 | A-02 | 362ddef2-3246-4172-aabb-6d1451cf8809 | W2-03 | Curing beton & pembongkaran bekisting | struktur | 2 | 5 | 3.0 | 12 | 14 | 2026-09-04 | 2026-09-07 | 1 | 2 | W2-03-C1 Curing disiram/ditutup minimal 7 hari True pending, W2-03-C2 Tidak ada retak susut besar / keropos True pending, W2-03-C3 Tanggal pembongkaran bekisting dicatat  pending | Perawatan beton (curing), Buka bekisting samping | site_engineer | site@sipro.co.id | project_manager | pm@sipro.co.id | blocked |  |  |  |  |  |  |  |  |  | 0 | 0 | 0 |  | 2026-09-05T19:55:48.494742+00:00 | 2026-09-05T19:55:48.507572+00:00 | W2-02 | True | HOLD POINT: bekisting jangan dibuka/dibebani terlalu cepat — samping 24 jam, beban berat 7 hari, kuat optimal 28 hari. | predecessor W2-02 'Pengecoran sloof, kolom praktis & talang beton' belum diverifikasi (status: blocked). | Bekisting samping minimal 24 jam setelah pengecoran |  |  |  |  |
| ef03a82a-255b-4594-993f-33aaad5b2401 | org-sipro | 01278f79-6752-45dd-81ac-cab73938d8fc | 889a963f-f67c-4e07-8002-7726eb789351 | A-02 | 362ddef2-3246-4172-aabb-6d1451cf8809 | W3-01 | Pasangan dinding bata merah | arsitektur | 3 | 6 | 8.0 | 15 | 21 | 2026-09-08 | 2026-09-15 | 3 | 3 | W3-01-C1 Pasangan tegak, lurus, dan siku True pending, W3-01-C2 Spesi terisi penuh (tidak ada rongga) True pending, W3-01-C3 Angkur kolom praktis terpasang tiap 6 lapis  pending | Pasangan bata merah, Kolom praktis lanjutan | site_engineer | site@sipro.co.id | project_manager | pm@sipro.co.id | blocked |  |  |  |  |  |  |  |  |  | 0 | 0 | 0 |  | 2026-09-05T19:55:48.494742+00:00 | 2026-09-05T19:55:48.508148+00:00 | W2-03 |  |  | predecessor W2-03 'Curing beton & pembongkaran bekisting' belum diverifikasi (status: blocked). | Cor sloof minimal 3–7 hari sebelum pasangan bata dimulai |  |  |  |  |
| 8e91bef2-818a-4904-87d3-57ba2092a2fe | org-sipro | 01278f79-6752-45dd-81ac-cab73938d8fc | 889a963f-f67c-4e07-8002-7726eb789351 | A-02 | 362ddef2-3246-4172-aabb-6d1451cf8809 | W3-02 | Jalur plumbing & conduit listrik tanam (sebelum plester) | mep | 3 | 7 | 4.0 | 15 | 21 | 2026-09-08 | 2026-09-15 | 0 | 3 | W3-02-C1 Jalur air diuji tekan tanpa kebocoran True pending, W3-02-C2 Conduit utuh, tidak tertekuk/pecah True pending, W3-02-C3 Foto as-built jalur diambil sebelum ditutup True pending | Jalur air bersih & kotor tanam, Conduit listrik tanam | site_engineer | site@sipro.co.id | project_manager | pm@sipro.co.id | blocked |  |  |  |  |  |  |  |  |  | 0 | 0 | 0 |  | 2026-09-05T19:55:48.494742+00:00 | 2026-09-05T19:55:48.508714+00:00 | W3-01 | True | HOLD POINT: jangan plester sebelum jalur plumbing & conduit tanam selesai, diuji, dan difoto sebagai as-built. | predecessor W3-01 'Pasangan dinding bata merah' belum diverifikasi (status: blocked). |  |  |  |  |  |
| 2c9fd726-92db-49df-8834-122ea7634843 | org-sipro | 01278f79-6752-45dd-81ac-cab73938d8fc | 889a963f-f67c-4e07-8002-7726eb789351 | A-02 | 362ddef2-3246-4172-aabb-6d1451cf8809 | W4-01 | Ring balok & ring gevel | struktur | 4 | 8 | 6.0 | 22 | 24 | 2026-09-16 | 2026-09-18 | 0 | 2 | W4-01-C1 Pembesian ring balk sesuai gambar True pending, W4-01-C2 Pengecoran padat & elevasi rata True pending, W4-01-C3 Angkur kuda-kuda disiapkan  pending | Pembesian & bekisting ring balk, Pengecoran ring balk, Ring gevel | site_engineer | site@sipro.co.id | project_manager | pm@sipro.co.id | blocked |  |  |  |  |  |  |  |  |  | 0 | 0 | 0 |  | 2026-09-05T19:55:48.494742+00:00 | 2026-09-05T19:55:48.509287+00:00 | W3-01, W3-02 |  |  | predecessor W3-01 'Pasangan dinding bata merah' belum diverifikasi (status: blocked)., predecessor W3-02 'Jalur plumbing & conduit listrik tanam (sebelum plester)' belum diverifikasi (status: blocked). |  |  |  |  |  |
| 59e9f66d-cf91-4523-8159-f9771d8a8bc8 | org-sipro | 01278f79-6752-45dd-81ac-cab73938d8fc | 889a963f-f67c-4e07-8002-7726eb789351 | A-02 | 362ddef2-3246-4172-aabb-6d1451cf8809 | W4-02 | Rangka atap baja ringan, penutup atap, lisplank | arsitektur | 4 | 9 | 8.0 | 25 | 27 | 2026-09-19 | 2026-09-22 | 3 | 4 | W4-02-C1 Jarak kuda-kuda & reng sesuai spesifikasi True pending, W4-02-C2 Sambungan/screw lengkap dan kencang  pending, W4-02-C3 Tes siram air: tidak ada kebocoran True pending, W4-02-C4 Kemiringan talang mengalir, tidak menggenang True pending | Rangka atap baja ringan, Genteng metal / atap spandek, Lisplank | site_engineer | site@sipro.co.id | project_manager | pm@sipro.co.id | blocked |  |  |  |  |  |  |  |  |  | 0 | 0 | 0 |  | 2026-09-05T19:55:48.494742+00:00 | 2026-09-05T19:55:48.509979+00:00 | W4-01 | True | HOLD POINT: jangan lanjut plafon bila atap masih bocor — wajib TES SIRAM AIR dan cek kemiringan talang. | predecessor W4-01 'Ring balok & ring gevel' belum diverifikasi (status: blocked). | Ring balok perlu mengeras minimal 3 hari sebelum dibebani rangka atap |  |  |  |  |
| 6cee2a26-3b3b-4ad8-9390-692e4984f29d | org-sipro | 01278f79-6752-45dd-81ac-cab73938d8fc | 889a963f-f67c-4e07-8002-7726eb789351 | A-02 | 362ddef2-3246-4172-aabb-6d1451cf8809 | W5-01 | Plester dinding | arsitektur | 5 | 10 | 6.0 | 28 | 32 | 2026-09-23 | 2026-09-28 | 3 | 3 | W5-01-C1 Permukaan rata, tegak, tidak bergelombang True pending, W5-01-C2 Sudut siku dan tajam  pending, W5-01-C3 Tidak ada bagian kosong/berongga saat diketuk True pending | Plester dinding dalam, Plester dinding luar | site_engineer | site@sipro.co.id | project_manager | pm@sipro.co.id | blocked |  |  |  |  |  |  |  |  |  | 0 | 0 | 0 |  | 2026-09-05T19:55:48.494742+00:00 | 2026-09-05T19:55:48.510541+00:00 | W3-02, W4-02 |  |  | predecessor W3-02 'Jalur plumbing & conduit listrik tanam (sebelum plester)' belum diverifikasi (status: blocked)., predecessor W4-02 'Rangka atap baja ringan, penutup atap, lisplank' belum diverifikasi (status: blocked). | Mortar bata harus stabil 3–5 hari agar plester tidak retak rambut |  |  |  |  |
| 7c9fdcae-36f9-4fc2-93e1-d5cc578102a4 | org-sipro | 01278f79-6752-45dd-81ac-cab73938d8fc | 889a963f-f67c-4e07-8002-7726eb789351 | A-02 | 362ddef2-3246-4172-aabb-6d1451cf8809 | W5-02 | Acian dinding | arsitektur | 5 | 11 | 4.0 | 33 | 35 | 2026-09-29 | 2026-10-01 | 3 | 2 | W5-02-C1 Acian halus, tanpa retak rambut True pending, W5-02-C2 Tidak ada bagian mengelupas / berdebu  pending | Acian dinding dalam, Acian dinding luar | site_engineer | site@sipro.co.id | project_manager | pm@sipro.co.id | blocked |  |  |  |  |  |  |  |  |  | 0 | 0 | 0 |  | 2026-09-05T19:55:48.494742+00:00 | 2026-09-05T19:55:48.511052+00:00 | W5-01 | True | HOLD POINT: jangan mengecat saat dinding masih basah — acian minimal 7–14 hari sebelum cat (risiko cat menggelembung, lembab, jamur). | predecessor W5-01 'Plester dinding' belum diverifikasi (status: blocked). | Plester perlu 2–3 hari sebelum diaci |  |  |  |  |
| c2a40751-ae26-422a-85fc-fcc1a3fcb0b0 | org-sipro | 01278f79-6752-45dd-81ac-cab73938d8fc | 889a963f-f67c-4e07-8002-7726eb789351 | A-02 | 362ddef2-3246-4172-aabb-6d1451cf8809 | W6-01 | Plafon (rangka hollow, gypsum, list) | arsitektur | 6 | 12 | 5.0 | 36 | 38 | 2026-10-02 | 2026-10-05 | 0 | 2 | W6-01-C1 Rangka hollow rata & kuat (tidak melendut) True pending, W6-01-C2 Sambungan gypsum di-compound rapi  pending, W6-01-C3 List gypsum lurus & rapat ke dinding  pending | Rangka hollow, Pemasangan gypsum, List gypsum | site_engineer | site@sipro.co.id | project_manager | pm@sipro.co.id | blocked |  |  |  |  |  |  |  |  |  | 0 | 0 | 0 |  | 2026-09-05T19:55:48.494742+00:00 | 2026-09-05T19:55:48.511619+00:00 | W4-02 |  |  | predecessor W4-02 'Rangka atap baja ringan, penutup atap, lisplank' belum diverifikasi (status: blocked). |  |  |  |  |  |
| 143010c7-c6e1-4894-b763-9cad439b446e | org-sipro | 01278f79-6752-45dd-81ac-cab73938d8fc | 889a963f-f67c-4e07-8002-7726eb789351 | A-02 | 362ddef2-3246-4172-aabb-6d1451cf8809 | W6-02 | Kusen, daun pintu, jendela & kaca | arsitektur | 6 | 13 | 5.0 | 39 | 41 | 2026-10-06 | 2026-10-08 | 0 | 3 | W6-02-C1 Kusen tegak, terkunci, dan tidak goyang True pending, W6-02-C2 Pintu & jendela menutup rapat, kunci berfungsi True pending, W6-02-C3 Kaca tanpa gores/retak dan sealant rapi  pending | Kusen pintu, Daun pintu, Kusen jendela, Kaca | site_engineer | site@sipro.co.id | project_manager | pm@sipro.co.id | blocked |  |  |  |  |  |  |  |  |  | 0 | 0 | 0 |  | 2026-09-05T19:55:48.494742+00:00 | 2026-09-05T19:55:48.512199+00:00 | W5-02 |  |  | predecessor W5-02 'Acian dinding' belum diverifikasi (status: blocked). |  |  |  |  |  |
| c9274e58-34da-4980-b940-db020cae5952 | org-sipro | 01278f79-6752-45dd-81ac-cab73938d8fc | 889a963f-f67c-4e07-8002-7726eb789351 | A-02 | 362ddef2-3246-4172-aabb-6d1451cf8809 | W7-01 | Keramik lantai, dinding KM & backsplash dapur | finishing | 7 | 14 | 7.0 | 42 | 45 | 2026-10-09 | 2026-10-13 | 0 | 4 | W7-01-C1 Nat lurus, seragam, dan terisi penuh True pending, W7-01-C2 Tidak kopong saat diketuk True pending, W7-01-C3 Kemiringan lantai KM mengarah ke floor drain True pending | Keramik lantai utama, Keramik kamar mandi, Keramik dinding KM, Keramik backsplash dapur | site_engineer | site@sipro.co.id | project_manager | pm@sipro.co.id | blocked |  |  |  |  |  |  |  |  |  | 0 | 0 | 0 |  | 2026-09-05T19:55:48.494742+00:00 | 2026-09-05T19:55:48.512692+00:00 | W5-02, W6-01 |  |  | predecessor W5-02 'Acian dinding' belum diverifikasi (status: blocked)., predecessor W6-01 'Plafon (rangka hollow, gypsum, list)' belum diverifikasi (status: blocked). |  |  |  |  |  |
| 93e5a2c9-b747-4946-8f96-5cbe25826990 | org-sipro | 01278f79-6752-45dd-81ac-cab73938d8fc | 889a963f-f67c-4e07-8002-7726eb789351 | A-02 | 362ddef2-3246-4172-aabb-6d1451cf8809 | W7-02 | Sanitasi & jalur air bersih (closet, kran, sink, septictank) | mep | 7 | 15 | 5.0 | 46 | 47 | 2026-10-14 | 2026-10-15 | 1 | 3 | W7-02-C1 Tes aliran air lancar di semua titik True pending, W7-02-C2 Tidak ada kebocoran pada sambungan True pending, W7-02-C3 Septictank & resapan sesuai spesifikasi  pending | Closet, Kran, Sink dapur, Septictank & resapan, Jalur air bersih | site_engineer | site@sipro.co.id | project_manager | pm@sipro.co.id | blocked |  |  |  |  |  |  |  |  |  | 0 | 0 | 0 |  | 2026-09-05T19:55:48.494742+00:00 | 2026-09-05T19:55:48.513245+00:00 | W7-01 |  |  | predecessor W7-01 'Keramik lantai, dinding KM & backsplash dapur' belum diverifikasi (status: blocked). | Nat keramik harus kering sebelum pemasangan sanitair |  |  |  |  |
| a8e63186-69ed-4552-a54e-073b27e2d151 | org-sipro | 01278f79-6752-45dd-81ac-cab73938d8fc | 889a963f-f67c-4e07-8002-7726eb789351 | A-02 | 362ddef2-3246-4172-aabb-6d1451cf8809 | W8-01 | Instalasi listrik (lampu, saklar, stop kontak) | mep | 8 | 16 | 4.0 | 48 | 50 | 2026-10-16 | 2026-10-19 | 0 | 3 | W8-01-C1 Semua titik diuji dan menyala True pending, W8-01-C2 Tidak ada kabel terbuka / sambungan liar True pending, W8-01-C3 MCB & grounding sesuai spesifikasi True pending | Lampu, Saklar, Stop kontak, Pengujian titik | site_engineer | site@sipro.co.id | project_manager | pm@sipro.co.id | blocked |  |  |  |  |  |  |  |  |  | 0 | 0 | 0 |  | 2026-09-05T19:55:48.494742+00:00 | 2026-09-05T19:55:48.513776+00:00 | W3-02, W6-01 |  |  | predecessor W3-02 'Jalur plumbing & conduit listrik tanam (sebelum plester)' belum diverifikasi (status: blocked)., predecessor W6-01 'Plafon (rangka hollow, gypsum, list)' belum diverifikasi (status: blocked). |  |  |  |  |  |
| 7308ba18-4daa-4dec-98a1-b072779607b2 | org-sipro | 01278f79-6752-45dd-81ac-cab73938d8fc | 889a963f-f67c-4e07-8002-7726eb789351 | A-02 | 362ddef2-3246-4172-aabb-6d1451cf8809 | W8-02 | Pengecatan interior, eksterior, plafon & lisplank | finishing | 8 | 17 | 5.0 | 51 | 53 | 2026-10-20 | 2026-10-22 | 7 | 3 | W8-02-C1 Dinding kering saat diuji kelembaban True pending, W8-02-C2 Cat rata minimal 2 lapis, tidak belang True pending, W8-02-C3 Tidak ada cipratan pada kusen/keramik  pending | Cat interior, Cat eksterior, Cat plafon, Cat lisplank | site_engineer | site@sipro.co.id | project_manager | pm@sipro.co.id | blocked |  |  |  |  |  |  |  |  |  | 0 | 0 | 0 |  | 2026-09-05T19:55:48.494742+00:00 | 2026-09-05T19:55:48.514318+00:00 | W5-02, W6-01 | True | HOLD POINT: dinding wajib kering (uji lembab) sebelum cat dasar. | predecessor W5-02 'Acian dinding' belum diverifikasi (status: blocked)., predecessor W6-01 'Plafon (rangka hollow, gypsum, list)' belum diverifikasi (status: blocked). | Acian minimal 7–14 hari agar dinding kering sebelum dicat |  |  |  |  |
| f4d39152-bb62-47f1-965a-3b1f3d7a9aeb | org-sipro | 01278f79-6752-45dd-81ac-cab73938d8fc | 889a963f-f67c-4e07-8002-7726eb789351 | A-02 | 362ddef2-3246-4172-aabb-6d1451cf8809 | W8-03 | Pekerjaan luar (carport, dinding samping, taman) | lansekap | 8 | 18 | 3.0 | 54 | 54 | 2026-10-23 | 2026-10-23 | 0 | 2 | W8-03-C1 Carport rata, air tidak menggenang True pending, W8-03-C2 Area luar bersih dan rapi  pending | Carport, Dinding samping, Taman | site_engineer | site@sipro.co.id | project_manager | pm@sipro.co.id | blocked |  |  |  |  |  |  |  |  |  | 0 | 0 | 0 |  | 2026-09-05T19:55:48.494742+00:00 | 2026-09-05T19:55:48.514850+00:00 | W8-02 |  |  | predecessor W8-02 'Pengecatan interior, eksterior, plafon & lisplank' belum diverifikasi (status: blocked). |  |  |  |  |  |
| ae82598d-eb4f-4048-b12b-907bdef937f1 | org-sipro | 01278f79-6752-45dd-81ac-cab73938d8fc | 889a963f-f67c-4e07-8002-7726eb789351 | A-02 | 362ddef2-3246-4172-aabb-6d1451cf8809 | W9-01 | Pembersihan akhir & perbaikan defect | finishing | 9 | 19 | 3.0 | 55 | 58 | 2026-10-24 | 2026-10-28 | 0 | 3 | W9-01-C1 Semua temuan punch list sudah ditutup True pending, W9-01-C2 Bebas sisa material & puing True pending | Pembersihan akhir, Repair defect / punch list | site_engineer | site@sipro.co.id | project_manager | pm@sipro.co.id | blocked |  |  |  |  |  |  |  |  |  | 0 | 0 | 0 |  | 2026-09-05T19:55:48.494742+00:00 | 2026-09-05T19:55:48.515396+00:00 | W8-01, W8-02, W8-03 |  |  | predecessor W8-01 'Instalasi listrik (lampu, saklar, stop kontak)' belum diverifikasi (status: blocked)., predecessor W8-02 'Pengecatan interior, eksterior, plafon & lisplank' belum diverifikasi (status: blocked)., predecessor W8-03 'Pekerjaan luar (carport, dinding samping, taman)' belum diverifikasi (status: blocked). |  |  |  |  |  |
| b39229e0-d2fe-45c9-81e3-50e3c980daea | org-sipro | 01278f79-6752-45dd-81ac-cab73938d8fc | 889a963f-f67c-4e07-8002-7726eb789351 | A-02 | 362ddef2-3246-4172-aabb-6d1451cf8809 | W9-02 | Final QC & siap akad / serah terima | finishing | 9 | 20 | 2.0 | 59 | 60 | 2026-10-29 | 2026-10-30 | 0 | 4 | W9-02-C1 Air & listrik berfungsi normal True pending, W9-02-C2 Tidak ada kebocoran atap/plumbing True pending, W9-02-C3 Kunci, dokumen, dan manual siap diserahkan True pending, W9-02-C4 Pembeli/QC menandatangani hasil final  pending | Final QC, Serah terima kunci & dokumen | site_engineer | site@sipro.co.id | project_manager | pm@sipro.co.id | blocked |  |  |  |  |  |  |  |  |  | 0 | 0 | 0 |  | 2026-09-05T19:55:48.494742+00:00 | 2026-09-05T19:55:48.515933+00:00 | W9-01 | True | HOLD POINT: unit tidak boleh dinyatakan siap serah terima sebelum Final QC lulus (air, listrik, bocor, kunci, dokumen). | predecessor W9-01 'Pembersihan akhir & perbaikan defect' belum diverifikasi (status: blocked). |  |  |  | True |  |
| df012fcb-d896-49d3-9878-893e8fae1a83 | org-sipro | 01278f79-6752-45dd-81ac-cab73938d8fc | 30408b41-2838-4a27-b878-00aedabacd1e | A-03 | 4fca6b9f-7020-4015-805f-8b3f16c9f2d4 | W1-01 | Pekerjaan persiapan (pembersihan, pengukuran, bowplank) | persiapan | 1 | 1 | 2.0 | 1 | 2 | 2026-09-08 | 2026-09-09 | 0 | 2 | W1-01-C1 As bangunan sesuai siteplan True pending, W1-01-C2 Elevasi lantai aman dari jalan & drainase True pending, W1-01-C3 Bowplank kuat, siku, dan tidak mudah bergeser  pending | Pembersihan lokasi, Pengukuran, Pemasangan bowplank | site_engineer | site@sipro.co.id | project_manager | pm@sipro.co.id | ready |  |  |  |  |  |  |  |  |  | 0 | 0 | 0 | a7ffd949-5a4c-453d-b16f-39d49f8a133b | 2026-09-05T19:55:49.016797+00:00 | 2026-09-05T19:55:49.099448+00:00 |  |  |  |  |  |  |  |  |  |
| 917ca000-61f8-4a80-9cb3-2426602f5d22 | org-sipro | 01278f79-6752-45dd-81ac-cab73938d8fc | 30408b41-2838-4a27-b878-00aedabacd1e | A-03 | 4fca6b9f-7020-4015-805f-8b3f16c9f2d4 | W1-02 | Pekerjaan tanah & pondasi (galian, urugan pasir, batu belah) | struktur | 1 | 2 | 8.0 | 3 | 7 | 2026-09-10 | 2026-09-15 | 0 | 3 | W1-02-C1 Kedalaman & lebar galian sesuai gambar True pending, W1-02-C2 Urugan pasir dipadatkan dan rata  pending, W1-02-C3 Pasangan batu belah terkunci penuh, spesi mengisi rongga True pending, W1-02-C4 Tidak ada bagian pondasi yang menggantung/ambles True pending | Galian pondasi, Urugan pasir, Pasangan batu belah | site_engineer | site@sipro.co.id | project_manager | pm@sipro.co.id | blocked |  |  |  |  |  |  |  |  |  | 0 | 0 | 0 |  | 2026-09-05T19:55:49.016797+00:00 | 2026-09-05T19:55:49.200505+00:00 | W1-01 | True | HOLD POINT: tidak boleh lanjut sloof sebelum pondasi benar-benar terkunci (pasangan batu belah penuh, tidak ada rongga). | predecessor W1-01 'Pekerjaan persiapan (pembersihan, pengukuran, bowplank)' belum diverifikasi (status: ready). |  |  |  |  |  |
| 8dc17b1b-cfa0-4437-9879-1b901e98f72c | org-sipro | 01278f79-6752-45dd-81ac-cab73938d8fc | 30408b41-2838-4a27-b878-00aedabacd1e | A-03 | 4fca6b9f-7020-4015-805f-8b3f16c9f2d4 | W2-01 | Pembesian & bekisting sloof + kolom praktis | struktur | 2 | 3 | 6.0 | 8 | 10 | 2026-09-16 | 2026-09-18 | 2 | 3 | W2-01-C1 Diameter & jumlah besi sesuai gambar True pending, W2-01-C2 Beton decking (selimut beton) terpasang True pending, W2-01-C3 Bekisting kokoh, lurus, tidak bocor  pending | Pembesian sloof, Pembesian kolom praktis, Pemasangan bekisting | site_engineer | site@sipro.co.id | project_manager | pm@sipro.co.id | blocked |  |  |  |  |  |  |  |  |  | 0 | 0 | 0 |  | 2026-09-05T19:55:49.016797+00:00 | 2026-09-05T19:55:49.104572+00:00 | W1-02 |  |  | predecessor W1-02 'Pekerjaan tanah & pondasi (galian, urugan pasir, batu belah)' belum diverifikasi (status: blocked). | Pondasi batu kali minimal 1–2 hari sebelum sloof dikerjakan |  |  |  |  |
| 2783753b-d177-48ff-bf5a-6cb91521396d | org-sipro | 01278f79-6752-45dd-81ac-cab73938d8fc | 30408b41-2838-4a27-b878-00aedabacd1e | A-03 | 4fca6b9f-7020-4015-805f-8b3f16c9f2d4 | W2-02 | Pengecoran sloof, kolom praktis & talang beton | struktur | 2 | 4 | 6.0 | 11 | 11 | 2026-09-19 | 2026-09-19 | 0 | 2 | W2-02-C1 Mutu/slump beton sesuai spesifikasi True pending, W2-02-C2 Pengecoran padat, tidak keropos/segregasi True pending, W2-02-C3 Tanggal & jam pengecoran dicatat True pending | Pengecoran sloof, Pengecoran kolom praktis, Talang beton | site_engineer | site@sipro.co.id | project_manager | pm@sipro.co.id | blocked |  |  |  |  |  |  |  |  |  | 0 | 0 | 0 |  | 2026-09-05T19:55:49.016797+00:00 | 2026-09-05T19:55:49.105168+00:00 | W2-01 |  |  | predecessor W2-01 'Pembesian & bekisting sloof + kolom praktis' belum diverifikasi (status: blocked). |  |  |  |  |  |
| 1b5906c0-c1fa-45ce-9d96-ae4f173443e7 | org-sipro | 01278f79-6752-45dd-81ac-cab73938d8fc | 30408b41-2838-4a27-b878-00aedabacd1e | A-03 | 4fca6b9f-7020-4015-805f-8b3f16c9f2d4 | W2-03 | Curing beton & pembongkaran bekisting | struktur | 2 | 5 | 3.0 | 12 | 14 | 2026-09-21 | 2026-09-23 | 1 | 2 | W2-03-C1 Curing disiram/ditutup minimal 7 hari True pending, W2-03-C2 Tidak ada retak susut besar / keropos True pending, W2-03-C3 Tanggal pembongkaran bekisting dicatat  pending | Perawatan beton (curing), Buka bekisting samping | site_engineer | site@sipro.co.id | project_manager | pm@sipro.co.id | blocked |  |  |  |  |  |  |  |  |  | 0 | 0 | 0 |  | 2026-09-05T19:55:49.016797+00:00 | 2026-09-05T19:55:49.105681+00:00 | W2-02 | True | HOLD POINT: bekisting jangan dibuka/dibebani terlalu cepat — samping 24 jam, beban berat 7 hari, kuat optimal 28 hari. | predecessor W2-02 'Pengecoran sloof, kolom praktis & talang beton' belum diverifikasi (status: blocked). | Bekisting samping minimal 24 jam setelah pengecoran |  |  |  |  |
| a101496b-d850-43e6-b1ce-6ca27a059b39 | org-sipro | 01278f79-6752-45dd-81ac-cab73938d8fc | 30408b41-2838-4a27-b878-00aedabacd1e | A-03 | 4fca6b9f-7020-4015-805f-8b3f16c9f2d4 | W3-01 | Pasangan dinding bata merah | arsitektur | 3 | 6 | 8.0 | 15 | 21 | 2026-09-24 | 2026-10-01 | 3 | 3 | W3-01-C1 Pasangan tegak, lurus, dan siku True pending, W3-01-C2 Spesi terisi penuh (tidak ada rongga) True pending, W3-01-C3 Angkur kolom praktis terpasang tiap 6 lapis  pending | Pasangan bata merah, Kolom praktis lanjutan | site_engineer | site@sipro.co.id | project_manager | pm@sipro.co.id | blocked |  |  |  |  |  |  |  |  |  | 0 | 0 | 0 |  | 2026-09-05T19:55:49.016797+00:00 | 2026-09-05T19:55:49.106250+00:00 | W2-03 |  |  | predecessor W2-03 'Curing beton & pembongkaran bekisting' belum diverifikasi (status: blocked). | Cor sloof minimal 3–7 hari sebelum pasangan bata dimulai |  |  |  |  |
| 7e1beba5-3b0c-4a29-a214-10e6e6a22cc1 | org-sipro | 01278f79-6752-45dd-81ac-cab73938d8fc | 30408b41-2838-4a27-b878-00aedabacd1e | A-03 | 4fca6b9f-7020-4015-805f-8b3f16c9f2d4 | W3-02 | Jalur plumbing & conduit listrik tanam (sebelum plester) | mep | 3 | 7 | 4.0 | 15 | 21 | 2026-09-24 | 2026-10-01 | 0 | 3 | W3-02-C1 Jalur air diuji tekan tanpa kebocoran True pending, W3-02-C2 Conduit utuh, tidak tertekuk/pecah True pending, W3-02-C3 Foto as-built jalur diambil sebelum ditutup True pending | Jalur air bersih & kotor tanam, Conduit listrik tanam | site_engineer | site@sipro.co.id | project_manager | pm@sipro.co.id | blocked |  |  |  |  |  |  |  |  |  | 0 | 0 | 0 |  | 2026-09-05T19:55:49.016797+00:00 | 2026-09-05T19:55:49.106825+00:00 | W3-01 | True | HOLD POINT: jangan plester sebelum jalur plumbing & conduit tanam selesai, diuji, dan difoto sebagai as-built. | predecessor W3-01 'Pasangan dinding bata merah' belum diverifikasi (status: blocked). |  |  |  |  |  |
| 2f839870-c313-4987-9ae4-105432f2d1e4 | org-sipro | 01278f79-6752-45dd-81ac-cab73938d8fc | 30408b41-2838-4a27-b878-00aedabacd1e | A-03 | 4fca6b9f-7020-4015-805f-8b3f16c9f2d4 | W4-01 | Ring balok & ring gevel | struktur | 4 | 8 | 6.0 | 22 | 24 | 2026-10-02 | 2026-10-05 | 0 | 2 | W4-01-C1 Pembesian ring balk sesuai gambar True pending, W4-01-C2 Pengecoran padat & elevasi rata True pending, W4-01-C3 Angkur kuda-kuda disiapkan  pending | Pembesian & bekisting ring balk, Pengecoran ring balk, Ring gevel | site_engineer | site@sipro.co.id | project_manager | pm@sipro.co.id | blocked |  |  |  |  |  |  |  |  |  | 0 | 0 | 0 |  | 2026-09-05T19:55:49.016797+00:00 | 2026-09-05T19:55:49.107334+00:00 | W3-01, W3-02 |  |  | predecessor W3-01 'Pasangan dinding bata merah' belum diverifikasi (status: blocked)., predecessor W3-02 'Jalur plumbing & conduit listrik tanam (sebelum plester)' belum diverifikasi (status: blocked). |  |  |  |  |  |
| 60d1ea3c-f985-405e-b5f8-ec8e9e06c4ad | org-sipro | 01278f79-6752-45dd-81ac-cab73938d8fc | 30408b41-2838-4a27-b878-00aedabacd1e | A-03 | 4fca6b9f-7020-4015-805f-8b3f16c9f2d4 | W4-02 | Rangka atap baja ringan, penutup atap, lisplank | arsitektur | 4 | 9 | 8.0 | 25 | 27 | 2026-10-06 | 2026-10-08 | 3 | 4 | W4-02-C1 Jarak kuda-kuda & reng sesuai spesifikasi True pending, W4-02-C2 Sambungan/screw lengkap dan kencang  pending, W4-02-C3 Tes siram air: tidak ada kebocoran True pending, W4-02-C4 Kemiringan talang mengalir, tidak menggenang True pending | Rangka atap baja ringan, Genteng metal / atap spandek, Lisplank | site_engineer | site@sipro.co.id | project_manager | pm@sipro.co.id | blocked |  |  |  |  |  |  |  |  |  | 0 | 0 | 0 |  | 2026-09-05T19:55:49.016797+00:00 | 2026-09-05T19:55:49.107819+00:00 | W4-01 | True | HOLD POINT: jangan lanjut plafon bila atap masih bocor — wajib TES SIRAM AIR dan cek kemiringan talang. | predecessor W4-01 'Ring balok & ring gevel' belum diverifikasi (status: blocked). | Ring balok perlu mengeras minimal 3 hari sebelum dibebani rangka atap |  |  |  |  |
| 3a868d86-efe0-4d36-a825-44ea79002eee | org-sipro | 01278f79-6752-45dd-81ac-cab73938d8fc | 30408b41-2838-4a27-b878-00aedabacd1e | A-03 | 4fca6b9f-7020-4015-805f-8b3f16c9f2d4 | W5-01 | Plester dinding | arsitektur | 5 | 10 | 6.0 | 28 | 32 | 2026-10-09 | 2026-10-14 | 3 | 3 | W5-01-C1 Permukaan rata, tegak, tidak bergelombang True pending, W5-01-C2 Sudut siku dan tajam  pending, W5-01-C3 Tidak ada bagian kosong/berongga saat diketuk True pending | Plester dinding dalam, Plester dinding luar | site_engineer | site@sipro.co.id | project_manager | pm@sipro.co.id | blocked |  |  |  |  |  |  |  |  |  | 0 | 0 | 0 |  | 2026-09-05T19:55:49.016797+00:00 | 2026-09-05T19:55:49.108269+00:00 | W3-02, W4-02 |  |  | predecessor W3-02 'Jalur plumbing & conduit listrik tanam (sebelum plester)' belum diverifikasi (status: blocked)., predecessor W4-02 'Rangka atap baja ringan, penutup atap, lisplank' belum diverifikasi (status: blocked). | Mortar bata harus stabil 3–5 hari agar plester tidak retak rambut |  |  |  |  |
| 79439f70-c667-474d-987c-f07ff6e729f5 | org-sipro | 01278f79-6752-45dd-81ac-cab73938d8fc | 30408b41-2838-4a27-b878-00aedabacd1e | A-03 | 4fca6b9f-7020-4015-805f-8b3f16c9f2d4 | W5-02 | Acian dinding | arsitektur | 5 | 11 | 4.0 | 33 | 35 | 2026-10-15 | 2026-10-17 | 3 | 2 | W5-02-C1 Acian halus, tanpa retak rambut True pending, W5-02-C2 Tidak ada bagian mengelupas / berdebu  pending | Acian dinding dalam, Acian dinding luar | site_engineer | site@sipro.co.id | project_manager | pm@sipro.co.id | blocked |  |  |  |  |  |  |  |  |  | 0 | 0 | 0 |  | 2026-09-05T19:55:49.016797+00:00 | 2026-09-05T19:55:49.109044+00:00 | W5-01 | True | HOLD POINT: jangan mengecat saat dinding masih basah — acian minimal 7–14 hari sebelum cat (risiko cat menggelembung, lembab, jamur). | predecessor W5-01 'Plester dinding' belum diverifikasi (status: blocked). | Plester perlu 2–3 hari sebelum diaci |  |  |  |  |
| d1ea11ec-1e90-4833-bae4-8f90efe870d4 | org-sipro | 01278f79-6752-45dd-81ac-cab73938d8fc | 30408b41-2838-4a27-b878-00aedabacd1e | A-03 | 4fca6b9f-7020-4015-805f-8b3f16c9f2d4 | W6-01 | Plafon (rangka hollow, gypsum, list) | arsitektur | 6 | 12 | 5.0 | 36 | 38 | 2026-10-19 | 2026-10-21 | 0 | 2 | W6-01-C1 Rangka hollow rata & kuat (tidak melendut) True pending, W6-01-C2 Sambungan gypsum di-compound rapi  pending, W6-01-C3 List gypsum lurus & rapat ke dinding  pending | Rangka hollow, Pemasangan gypsum, List gypsum | site_engineer | site@sipro.co.id | project_manager | pm@sipro.co.id | blocked |  |  |  |  |  |  |  |  |  | 0 | 0 | 0 |  | 2026-09-05T19:55:49.016797+00:00 | 2026-09-05T19:55:49.109655+00:00 | W4-02 |  |  | predecessor W4-02 'Rangka atap baja ringan, penutup atap, lisplank' belum diverifikasi (status: blocked). |  |  |  |  |  |
| 98e93adf-19e3-40db-b1ce-a9adf7c19565 | org-sipro | 01278f79-6752-45dd-81ac-cab73938d8fc | 30408b41-2838-4a27-b878-00aedabacd1e | A-03 | 4fca6b9f-7020-4015-805f-8b3f16c9f2d4 | W6-02 | Kusen, daun pintu, jendela & kaca | arsitektur | 6 | 13 | 5.0 | 39 | 41 | 2026-10-22 | 2026-10-24 | 0 | 3 | W6-02-C1 Kusen tegak, terkunci, dan tidak goyang True pending, W6-02-C2 Pintu & jendela menutup rapat, kunci berfungsi True pending, W6-02-C3 Kaca tanpa gores/retak dan sealant rapi  pending | Kusen pintu, Daun pintu, Kusen jendela, Kaca | site_engineer | site@sipro.co.id | project_manager | pm@sipro.co.id | blocked |  |  |  |  |  |  |  |  |  | 0 | 0 | 0 |  | 2026-09-05T19:55:49.016797+00:00 | 2026-09-05T19:55:49.110126+00:00 | W5-02 |  |  | predecessor W5-02 'Acian dinding' belum diverifikasi (status: blocked). |  |  |  |  |  |
| 493bf13a-328a-417d-927a-9e0404db5cbc | org-sipro | 01278f79-6752-45dd-81ac-cab73938d8fc | 30408b41-2838-4a27-b878-00aedabacd1e | A-03 | 4fca6b9f-7020-4015-805f-8b3f16c9f2d4 | W7-01 | Keramik lantai, dinding KM & backsplash dapur | finishing | 7 | 14 | 7.0 | 42 | 45 | 2026-10-26 | 2026-10-29 | 0 | 4 | W7-01-C1 Nat lurus, seragam, dan terisi penuh True pending, W7-01-C2 Tidak kopong saat diketuk True pending, W7-01-C3 Kemiringan lantai KM mengarah ke floor drain True pending | Keramik lantai utama, Keramik kamar mandi, Keramik dinding KM, Keramik backsplash dapur | site_engineer | site@sipro.co.id | project_manager | pm@sipro.co.id | blocked |  |  |  |  |  |  |  |  |  | 0 | 0 | 0 |  | 2026-09-05T19:55:49.016797+00:00 | 2026-09-05T19:55:49.110632+00:00 | W5-02, W6-01 |  |  | predecessor W5-02 'Acian dinding' belum diverifikasi (status: blocked)., predecessor W6-01 'Plafon (rangka hollow, gypsum, list)' belum diverifikasi (status: blocked). |  |  |  |  |  |
| 4f0608ec-fa1a-448d-9b5c-abdc637dafff | org-sipro | 01278f79-6752-45dd-81ac-cab73938d8fc | 30408b41-2838-4a27-b878-00aedabacd1e | A-03 | 4fca6b9f-7020-4015-805f-8b3f16c9f2d4 | W7-02 | Sanitasi & jalur air bersih (closet, kran, sink, septictank) | mep | 7 | 15 | 5.0 | 46 | 47 | 2026-10-30 | 2026-10-31 | 1 | 3 | W7-02-C1 Tes aliran air lancar di semua titik True pending, W7-02-C2 Tidak ada kebocoran pada sambungan True pending, W7-02-C3 Septictank & resapan sesuai spesifikasi  pending | Closet, Kran, Sink dapur, Septictank & resapan, Jalur air bersih | site_engineer | site@sipro.co.id | project_manager | pm@sipro.co.id | blocked |  |  |  |  |  |  |  |  |  | 0 | 0 | 0 |  | 2026-09-05T19:55:49.016797+00:00 | 2026-09-05T19:55:49.111121+00:00 | W7-01 |  |  | predecessor W7-01 'Keramik lantai, dinding KM & backsplash dapur' belum diverifikasi (status: blocked). | Nat keramik harus kering sebelum pemasangan sanitair |  |  |  |  |
| a0c36815-f523-4f2a-b471-56183ee04961 | org-sipro | 01278f79-6752-45dd-81ac-cab73938d8fc | 30408b41-2838-4a27-b878-00aedabacd1e | A-03 | 4fca6b9f-7020-4015-805f-8b3f16c9f2d4 | W8-01 | Instalasi listrik (lampu, saklar, stop kontak) | mep | 8 | 16 | 4.0 | 48 | 50 | 2026-11-02 | 2026-11-04 | 0 | 3 | W8-01-C1 Semua titik diuji dan menyala True pending, W8-01-C2 Tidak ada kabel terbuka / sambungan liar True pending, W8-01-C3 MCB & grounding sesuai spesifikasi True pending | Lampu, Saklar, Stop kontak, Pengujian titik | site_engineer | site@sipro.co.id | project_manager | pm@sipro.co.id | blocked |  |  |  |  |  |  |  |  |  | 0 | 0 | 0 |  | 2026-09-05T19:55:49.016797+00:00 | 2026-09-05T19:55:49.111665+00:00 | W3-02, W6-01 |  |  | predecessor W3-02 'Jalur plumbing & conduit listrik tanam (sebelum plester)' belum diverifikasi (status: blocked)., predecessor W6-01 'Plafon (rangka hollow, gypsum, list)' belum diverifikasi (status: blocked). |  |  |  |  |  |
| d5a86d08-d4a8-479c-b69b-cfe4058a82c4 | org-sipro | 01278f79-6752-45dd-81ac-cab73938d8fc | 30408b41-2838-4a27-b878-00aedabacd1e | A-03 | 4fca6b9f-7020-4015-805f-8b3f16c9f2d4 | W8-02 | Pengecatan interior, eksterior, plafon & lisplank | finishing | 8 | 17 | 5.0 | 51 | 53 | 2026-11-05 | 2026-11-07 | 7 | 3 | W8-02-C1 Dinding kering saat diuji kelembaban True pending, W8-02-C2 Cat rata minimal 2 lapis, tidak belang True pending, W8-02-C3 Tidak ada cipratan pada kusen/keramik  pending | Cat interior, Cat eksterior, Cat plafon, Cat lisplank | site_engineer | site@sipro.co.id | project_manager | pm@sipro.co.id | blocked |  |  |  |  |  |  |  |  |  | 0 | 0 | 0 |  | 2026-09-05T19:55:49.016797+00:00 | 2026-09-05T19:55:49.112184+00:00 | W5-02, W6-01 | True | HOLD POINT: dinding wajib kering (uji lembab) sebelum cat dasar. | predecessor W5-02 'Acian dinding' belum diverifikasi (status: blocked)., predecessor W6-01 'Plafon (rangka hollow, gypsum, list)' belum diverifikasi (status: blocked). | Acian minimal 7–14 hari agar dinding kering sebelum dicat |  |  |  |  |
| 103194cb-7663-4802-a5ff-0de8b3f52707 | org-sipro | 01278f79-6752-45dd-81ac-cab73938d8fc | 30408b41-2838-4a27-b878-00aedabacd1e | A-03 | 4fca6b9f-7020-4015-805f-8b3f16c9f2d4 | W8-03 | Pekerjaan luar (carport, dinding samping, taman) | lansekap | 8 | 18 | 3.0 | 54 | 54 | 2026-11-09 | 2026-11-09 | 0 | 2 | W8-03-C1 Carport rata, air tidak menggenang True pending, W8-03-C2 Area luar bersih dan rapi  pending | Carport, Dinding samping, Taman | site_engineer | site@sipro.co.id | project_manager | pm@sipro.co.id | blocked |  |  |  |  |  |  |  |  |  | 0 | 0 | 0 |  | 2026-09-05T19:55:49.016797+00:00 | 2026-09-05T19:55:49.112677+00:00 | W8-02 |  |  | predecessor W8-02 'Pengecatan interior, eksterior, plafon & lisplank' belum diverifikasi (status: blocked). |  |  |  |  |  |
| fe9a9428-b1ec-4a44-9793-30e893846cde | org-sipro | 01278f79-6752-45dd-81ac-cab73938d8fc | 30408b41-2838-4a27-b878-00aedabacd1e | A-03 | 4fca6b9f-7020-4015-805f-8b3f16c9f2d4 | W9-01 | Pembersihan akhir & perbaikan defect | finishing | 9 | 19 | 3.0 | 55 | 58 | 2026-11-10 | 2026-11-13 | 0 | 3 | W9-01-C1 Semua temuan punch list sudah ditutup True pending, W9-01-C2 Bebas sisa material & puing True pending | Pembersihan akhir, Repair defect / punch list | site_engineer | site@sipro.co.id | project_manager | pm@sipro.co.id | blocked |  |  |  |  |  |  |  |  |  | 0 | 0 | 0 |  | 2026-09-05T19:55:49.016797+00:00 | 2026-09-05T19:55:49.113159+00:00 | W8-01, W8-02, W8-03 |  |  | predecessor W8-01 'Instalasi listrik (lampu, saklar, stop kontak)' belum diverifikasi (status: blocked)., predecessor W8-02 'Pengecatan interior, eksterior, plafon & lisplank' belum diverifikasi (status: blocked)., predecessor W8-03 'Pekerjaan luar (carport, dinding samping, taman)' belum diverifikasi (status: blocked). |  |  |  |  |  |
| ebe9dfec-d3fb-4b56-bc07-c18f525e0ffd | org-sipro | 01278f79-6752-45dd-81ac-cab73938d8fc | 30408b41-2838-4a27-b878-00aedabacd1e | A-03 | 4fca6b9f-7020-4015-805f-8b3f16c9f2d4 | W9-02 | Final QC & siap akad / serah terima | finishing | 9 | 20 | 2.0 | 59 | 60 | 2026-11-14 | 2026-11-16 | 0 | 4 | W9-02-C1 Air & listrik berfungsi normal True pending, W9-02-C2 Tidak ada kebocoran atap/plumbing True pending, W9-02-C3 Kunci, dokumen, dan manual siap diserahkan True pending, W9-02-C4 Pembeli/QC menandatangani hasil final  pending | Final QC, Serah terima kunci & dokumen | site_engineer | site@sipro.co.id | project_manager | pm@sipro.co.id | blocked |  |  |  |  |  |  |  |  |  | 0 | 0 | 0 |  | 2026-09-05T19:55:49.016797+00:00 | 2026-09-05T19:55:49.192961+00:00 | W9-01 | True | HOLD POINT: unit tidak boleh dinyatakan siap serah terima sebelum Final QC lulus (air, listrik, bocor, kunci, dokumen). | predecessor W9-01 'Pembersihan akhir & perbaikan defect' belum diverifikasi (status: blocked). |  |  |  | True |  |
| 892870d5-f819-4398-bfb6-09e88d85e437 | org-sipro | 01278f79-6752-45dd-81ac-cab73938d8fc | 423ab55c-914d-423e-bdf9-b822b7d2497b | A-05 | 62e35753-9dd4-44b8-8d60-e82ea9e0bc66 | W1-01 | Pekerjaan persiapan (pembersihan, pengukuran, bowplank) | persiapan | 1 | 1 | 2.0 | 1 | 2 | 2026-09-05 | 2026-09-07 | 0 | 2 | W1-01-C1 As bangunan sesuai siteplan True pending, W1-01-C2 Elevasi lantai aman dari jalan & drainase True pending, W1-01-C3 Bowplank kuat, siku, dan tidak mudah bergeser  pending | Pembersihan lokasi, Pengukuran, Pemasangan bowplank | site_engineer | site@sipro.co.id | project_manager | pm@sipro.co.id | ready |  |  |  |  |  |  |  |  |  | 0 | 0 | 0 | 11f63184-1669-4044-bbb4-faf1d75620c1 | 2026-09-05T19:55:51.102338+00:00 | 2026-09-05T20:15:26.828493+00:00 |  |  |  |  |  |  |  |  | 2026-09-05 |
| 441a5b89-ea3f-43ac-b019-61f45420b465 | org-sipro | 01278f79-6752-45dd-81ac-cab73938d8fc | 423ab55c-914d-423e-bdf9-b822b7d2497b | A-05 | 62e35753-9dd4-44b8-8d60-e82ea9e0bc66 | W1-02 | Pekerjaan tanah & pondasi (galian, urugan pasir, batu belah) | struktur | 1 | 2 | 8.0 | 3 | 7 | 2026-09-08 | 2026-09-12 | 0 | 3 | W1-02-C1 Kedalaman & lebar galian sesuai gambar True pending, W1-02-C2 Urugan pasir dipadatkan dan rata  pending, W1-02-C3 Pasangan batu belah terkunci penuh, spesi mengisi rongga True pending, W1-02-C4 Tidak ada bagian pondasi yang menggantung/ambles True pending | Galian pondasi, Urugan pasir, Pasangan batu belah | site_engineer | site@sipro.co.id | project_manager | pm@sipro.co.id | blocked |  |  |  |  |  |  |  |  |  | 0 | 0 | 0 |  | 2026-09-05T19:55:51.102338+00:00 | 2026-09-05T20:15:26.826131+00:00 | W1-01 | True | HOLD POINT: tidak boleh lanjut sloof sebelum pondasi benar-benar terkunci (pasangan batu belah penuh, tidak ada rongga). | predecessor W1-01 'Pekerjaan persiapan (pembersihan, pengukuran, bowplank)' belum diverifikasi (status: ready). |  |  |  |  |  |
| 1281b064-26d2-4a72-bb28-7c776dd61e65 | org-sipro | 01278f79-6752-45dd-81ac-cab73938d8fc | 423ab55c-914d-423e-bdf9-b822b7d2497b | A-05 | 62e35753-9dd4-44b8-8d60-e82ea9e0bc66 | W2-01 | Pembesian & bekisting sloof + kolom praktis | struktur | 2 | 3 | 6.0 | 8 | 10 | 2026-09-14 | 2026-09-16 | 2 | 3 | W2-01-C1 Diameter & jumlah besi sesuai gambar True pending, W2-01-C2 Beton decking (selimut beton) terpasang True pending, W2-01-C3 Bekisting kokoh, lurus, tidak bocor  pending | Pembesian sloof, Pembesian kolom praktis, Pemasangan bekisting | site_engineer | site@sipro.co.id | project_manager | pm@sipro.co.id | blocked |  |  |  |  |  |  |  |  |  | 0 | 0 | 0 |  | 2026-09-05T19:55:51.102338+00:00 | 2026-09-05T19:55:51.115500+00:00 | W1-02 |  |  | predecessor W1-02 'Pekerjaan tanah & pondasi (galian, urugan pasir, batu belah)' belum diverifikasi (status: blocked). | Pondasi batu kali minimal 1–2 hari sebelum sloof dikerjakan |  |  |  |  |
| 9e1c7ed6-87b1-435d-993d-e64424ae41ef | org-sipro | 01278f79-6752-45dd-81ac-cab73938d8fc | 423ab55c-914d-423e-bdf9-b822b7d2497b | A-05 | 62e35753-9dd4-44b8-8d60-e82ea9e0bc66 | W2-02 | Pengecoran sloof, kolom praktis & talang beton | struktur | 2 | 4 | 6.0 | 11 | 11 | 2026-09-17 | 2026-09-17 | 0 | 2 | W2-02-C1 Mutu/slump beton sesuai spesifikasi True pending, W2-02-C2 Pengecoran padat, tidak keropos/segregasi True pending, W2-02-C3 Tanggal & jam pengecoran dicatat True pending | Pengecoran sloof, Pengecoran kolom praktis, Talang beton | site_engineer | site@sipro.co.id | project_manager | pm@sipro.co.id | blocked |  |  |  |  |  |  |  |  |  | 0 | 0 | 0 |  | 2026-09-05T19:55:51.102338+00:00 | 2026-09-05T19:55:51.116055+00:00 | W2-01 |  |  | predecessor W2-01 'Pembesian & bekisting sloof + kolom praktis' belum diverifikasi (status: blocked). |  |  |  |  |  |
| adcfcdc1-c071-4abe-801f-865917abad85 | org-sipro | 01278f79-6752-45dd-81ac-cab73938d8fc | 423ab55c-914d-423e-bdf9-b822b7d2497b | A-05 | 62e35753-9dd4-44b8-8d60-e82ea9e0bc66 | W2-03 | Curing beton & pembongkaran bekisting | struktur | 2 | 5 | 3.0 | 12 | 14 | 2026-09-18 | 2026-09-21 | 1 | 2 | W2-03-C1 Curing disiram/ditutup minimal 7 hari True pending, W2-03-C2 Tidak ada retak susut besar / keropos True pending, W2-03-C3 Tanggal pembongkaran bekisting dicatat  pending | Perawatan beton (curing), Buka bekisting samping | site_engineer | site@sipro.co.id | project_manager | pm@sipro.co.id | blocked |  |  |  |  |  |  |  |  |  | 0 | 0 | 0 |  | 2026-09-05T19:55:51.102338+00:00 | 2026-09-05T19:55:51.116680+00:00 | W2-02 | True | HOLD POINT: bekisting jangan dibuka/dibebani terlalu cepat — samping 24 jam, beban berat 7 hari, kuat optimal 28 hari. | predecessor W2-02 'Pengecoran sloof, kolom praktis & talang beton' belum diverifikasi (status: blocked). | Bekisting samping minimal 24 jam setelah pengecoran |  |  |  |  |
| 4d3c692c-744e-4a54-b2ce-5a6f964a0e9d | org-sipro | 01278f79-6752-45dd-81ac-cab73938d8fc | 423ab55c-914d-423e-bdf9-b822b7d2497b | A-05 | 62e35753-9dd4-44b8-8d60-e82ea9e0bc66 | W3-01 | Pasangan dinding bata merah | arsitektur | 3 | 6 | 8.0 | 15 | 21 | 2026-09-22 | 2026-09-29 | 3 | 3 | W3-01-C1 Pasangan tegak, lurus, dan siku True pending, W3-01-C2 Spesi terisi penuh (tidak ada rongga) True pending, W3-01-C3 Angkur kolom praktis terpasang tiap 6 lapis  pending | Pasangan bata merah, Kolom praktis lanjutan | site_engineer | site@sipro.co.id | project_manager | pm@sipro.co.id | blocked |  |  |  |  |  |  |  |  |  | 0 | 0 | 0 |  | 2026-09-05T19:55:51.102338+00:00 | 2026-09-05T19:55:51.117269+00:00 | W2-03 |  |  | predecessor W2-03 'Curing beton & pembongkaran bekisting' belum diverifikasi (status: blocked). | Cor sloof minimal 3–7 hari sebelum pasangan bata dimulai |  |  |  |  |
| 0553698f-c3e9-4ee1-a28e-b3cd8adb532e | org-sipro | 01278f79-6752-45dd-81ac-cab73938d8fc | 423ab55c-914d-423e-bdf9-b822b7d2497b | A-05 | 62e35753-9dd4-44b8-8d60-e82ea9e0bc66 | W3-02 | Jalur plumbing & conduit listrik tanam (sebelum plester) | mep | 3 | 7 | 4.0 | 15 | 21 | 2026-09-22 | 2026-09-29 | 0 | 3 | W3-02-C1 Jalur air diuji tekan tanpa kebocoran True pending, W3-02-C2 Conduit utuh, tidak tertekuk/pecah True pending, W3-02-C3 Foto as-built jalur diambil sebelum ditutup True pending | Jalur air bersih & kotor tanam, Conduit listrik tanam | site_engineer | site@sipro.co.id | project_manager | pm@sipro.co.id | blocked |  |  |  |  |  |  |  |  |  | 0 | 0 | 0 |  | 2026-09-05T19:55:51.102338+00:00 | 2026-09-05T19:55:51.117889+00:00 | W3-01 | True | HOLD POINT: jangan plester sebelum jalur plumbing & conduit tanam selesai, diuji, dan difoto sebagai as-built. | predecessor W3-01 'Pasangan dinding bata merah' belum diverifikasi (status: blocked). |  |  |  |  |  |
| af99d8e9-6c69-4074-b082-1bdd42f28b5e | org-sipro | 01278f79-6752-45dd-81ac-cab73938d8fc | 423ab55c-914d-423e-bdf9-b822b7d2497b | A-05 | 62e35753-9dd4-44b8-8d60-e82ea9e0bc66 | W4-01 | Ring balok & ring gevel | struktur | 4 | 8 | 6.0 | 22 | 24 | 2026-09-30 | 2026-10-02 | 0 | 2 | W4-01-C1 Pembesian ring balk sesuai gambar True pending, W4-01-C2 Pengecoran padat & elevasi rata True pending, W4-01-C3 Angkur kuda-kuda disiapkan  pending | Pembesian & bekisting ring balk, Pengecoran ring balk, Ring gevel | site_engineer | site@sipro.co.id | project_manager | pm@sipro.co.id | blocked |  |  |  |  |  |  |  |  |  | 0 | 0 | 0 |  | 2026-09-05T19:55:51.102338+00:00 | 2026-09-05T19:55:51.118524+00:00 | W3-01, W3-02 |  |  | predecessor W3-01 'Pasangan dinding bata merah' belum diverifikasi (status: blocked)., predecessor W3-02 'Jalur plumbing & conduit listrik tanam (sebelum plester)' belum diverifikasi (status: blocked). |  |  |  |  |  |
| 1c4cddeb-d45e-4669-a4da-e3b8f719f57e | org-sipro | 01278f79-6752-45dd-81ac-cab73938d8fc | 423ab55c-914d-423e-bdf9-b822b7d2497b | A-05 | 62e35753-9dd4-44b8-8d60-e82ea9e0bc66 | W4-02 | Rangka atap baja ringan, penutup atap, lisplank | arsitektur | 4 | 9 | 8.0 | 25 | 27 | 2026-10-03 | 2026-10-06 | 3 | 4 | W4-02-C1 Jarak kuda-kuda & reng sesuai spesifikasi True pending, W4-02-C2 Sambungan/screw lengkap dan kencang  pending, W4-02-C3 Tes siram air: tidak ada kebocoran True pending, W4-02-C4 Kemiringan talang mengalir, tidak menggenang True pending | Rangka atap baja ringan, Genteng metal / atap spandek, Lisplank | site_engineer | site@sipro.co.id | project_manager | pm@sipro.co.id | blocked |  |  |  |  |  |  |  |  |  | 0 | 0 | 0 |  | 2026-09-05T19:55:51.102338+00:00 | 2026-09-05T19:55:51.119109+00:00 | W4-01 | True | HOLD POINT: jangan lanjut plafon bila atap masih bocor — wajib TES SIRAM AIR dan cek kemiringan talang. | predecessor W4-01 'Ring balok & ring gevel' belum diverifikasi (status: blocked). | Ring balok perlu mengeras minimal 3 hari sebelum dibebani rangka atap |  |  |  |  |
| 032f0783-292e-4775-bb68-49032c64e5c3 | org-sipro | 01278f79-6752-45dd-81ac-cab73938d8fc | 423ab55c-914d-423e-bdf9-b822b7d2497b | A-05 | 62e35753-9dd4-44b8-8d60-e82ea9e0bc66 | W5-01 | Plester dinding | arsitektur | 5 | 10 | 6.0 | 28 | 32 | 2026-10-07 | 2026-10-12 | 3 | 3 | W5-01-C1 Permukaan rata, tegak, tidak bergelombang True pending, W5-01-C2 Sudut siku dan tajam  pending, W5-01-C3 Tidak ada bagian kosong/berongga saat diketuk True pending | Plester dinding dalam, Plester dinding luar | site_engineer | site@sipro.co.id | project_manager | pm@sipro.co.id | blocked |  |  |  |  |  |  |  |  |  | 0 | 0 | 0 |  | 2026-09-05T19:55:51.102338+00:00 | 2026-09-05T19:55:51.119804+00:00 | W3-02, W4-02 |  |  | predecessor W3-02 'Jalur plumbing & conduit listrik tanam (sebelum plester)' belum diverifikasi (status: blocked)., predecessor W4-02 'Rangka atap baja ringan, penutup atap, lisplank' belum diverifikasi (status: blocked). | Mortar bata harus stabil 3–5 hari agar plester tidak retak rambut |  |  |  |  |
| 729b820d-d164-444a-8d78-0b236161f14c | org-sipro | 01278f79-6752-45dd-81ac-cab73938d8fc | 423ab55c-914d-423e-bdf9-b822b7d2497b | A-05 | 62e35753-9dd4-44b8-8d60-e82ea9e0bc66 | W5-02 | Acian dinding | arsitektur | 5 | 11 | 4.0 | 33 | 35 | 2026-10-13 | 2026-10-15 | 3 | 2 | W5-02-C1 Acian halus, tanpa retak rambut True pending, W5-02-C2 Tidak ada bagian mengelupas / berdebu  pending | Acian dinding dalam, Acian dinding luar | site_engineer | site@sipro.co.id | project_manager | pm@sipro.co.id | blocked |  |  |  |  |  |  |  |  |  | 0 | 0 | 0 |  | 2026-09-05T19:55:51.102338+00:00 | 2026-09-05T19:55:51.120376+00:00 | W5-01 | True | HOLD POINT: jangan mengecat saat dinding masih basah — acian minimal 7–14 hari sebelum cat (risiko cat menggelembung, lembab, jamur). | predecessor W5-01 'Plester dinding' belum diverifikasi (status: blocked). | Plester perlu 2–3 hari sebelum diaci |  |  |  |  |
| 692834d7-22e5-4f41-8911-bfd55d0a87ff | org-sipro | 01278f79-6752-45dd-81ac-cab73938d8fc | 423ab55c-914d-423e-bdf9-b822b7d2497b | A-05 | 62e35753-9dd4-44b8-8d60-e82ea9e0bc66 | W6-01 | Plafon (rangka hollow, gypsum, list) | arsitektur | 6 | 12 | 5.0 | 36 | 38 | 2026-10-16 | 2026-10-19 | 0 | 2 | W6-01-C1 Rangka hollow rata & kuat (tidak melendut) True pending, W6-01-C2 Sambungan gypsum di-compound rapi  pending, W6-01-C3 List gypsum lurus & rapat ke dinding  pending | Rangka hollow, Pemasangan gypsum, List gypsum | site_engineer | site@sipro.co.id | project_manager | pm@sipro.co.id | blocked |  |  |  |  |  |  |  |  |  | 0 | 0 | 0 |  | 2026-09-05T19:55:51.102338+00:00 | 2026-09-05T19:55:51.120869+00:00 | W4-02 |  |  | predecessor W4-02 'Rangka atap baja ringan, penutup atap, lisplank' belum diverifikasi (status: blocked). |  |  |  |  |  |
| f2b3cc50-5a88-4364-acb1-e416c1a4f005 | org-sipro | 01278f79-6752-45dd-81ac-cab73938d8fc | 423ab55c-914d-423e-bdf9-b822b7d2497b | A-05 | 62e35753-9dd4-44b8-8d60-e82ea9e0bc66 | W6-02 | Kusen, daun pintu, jendela & kaca | arsitektur | 6 | 13 | 5.0 | 39 | 41 | 2026-10-20 | 2026-10-22 | 0 | 3 | W6-02-C1 Kusen tegak, terkunci, dan tidak goyang True pending, W6-02-C2 Pintu & jendela menutup rapat, kunci berfungsi True pending, W6-02-C3 Kaca tanpa gores/retak dan sealant rapi  pending | Kusen pintu, Daun pintu, Kusen jendela, Kaca | site_engineer | site@sipro.co.id | project_manager | pm@sipro.co.id | blocked |  |  |  |  |  |  |  |  |  | 0 | 0 | 0 |  | 2026-09-05T19:55:51.102338+00:00 | 2026-09-05T19:55:51.121363+00:00 | W5-02 |  |  | predecessor W5-02 'Acian dinding' belum diverifikasi (status: blocked). |  |  |  |  |  |
| 1c08ce68-e6f6-402c-92ac-17393d41cd27 | org-sipro | 01278f79-6752-45dd-81ac-cab73938d8fc | 423ab55c-914d-423e-bdf9-b822b7d2497b | A-05 | 62e35753-9dd4-44b8-8d60-e82ea9e0bc66 | W7-01 | Keramik lantai, dinding KM & backsplash dapur | finishing | 7 | 14 | 7.0 | 42 | 45 | 2026-10-23 | 2026-10-27 | 0 | 4 | W7-01-C1 Nat lurus, seragam, dan terisi penuh True pending, W7-01-C2 Tidak kopong saat diketuk True pending, W7-01-C3 Kemiringan lantai KM mengarah ke floor drain True pending | Keramik lantai utama, Keramik kamar mandi, Keramik dinding KM, Keramik backsplash dapur | site_engineer | site@sipro.co.id | project_manager | pm@sipro.co.id | blocked |  |  |  |  |  |  |  |  |  | 0 | 0 | 0 |  | 2026-09-05T19:55:51.102338+00:00 | 2026-09-05T19:55:51.121804+00:00 | W5-02, W6-01 |  |  | predecessor W5-02 'Acian dinding' belum diverifikasi (status: blocked)., predecessor W6-01 'Plafon (rangka hollow, gypsum, list)' belum diverifikasi (status: blocked). |  |  |  |  |  |
| f5d64bd7-ea34-47a9-9ea5-764fb9248fca | org-sipro | 01278f79-6752-45dd-81ac-cab73938d8fc | 423ab55c-914d-423e-bdf9-b822b7d2497b | A-05 | 62e35753-9dd4-44b8-8d60-e82ea9e0bc66 | W7-02 | Sanitasi & jalur air bersih (closet, kran, sink, septictank) | mep | 7 | 15 | 5.0 | 46 | 47 | 2026-10-28 | 2026-10-29 | 1 | 3 | W7-02-C1 Tes aliran air lancar di semua titik True pending, W7-02-C2 Tidak ada kebocoran pada sambungan True pending, W7-02-C3 Septictank & resapan sesuai spesifikasi  pending | Closet, Kran, Sink dapur, Septictank & resapan, Jalur air bersih | site_engineer | site@sipro.co.id | project_manager | pm@sipro.co.id | blocked |  |  |  |  |  |  |  |  |  | 0 | 0 | 0 |  | 2026-09-05T19:55:51.102338+00:00 | 2026-09-05T19:55:51.192775+00:00 | W7-01 |  |  | predecessor W7-01 'Keramik lantai, dinding KM & backsplash dapur' belum diverifikasi (status: blocked). | Nat keramik harus kering sebelum pemasangan sanitair |  |  |  |  |
| 7ef25adb-b9d8-4b3a-8d3f-b310921e1561 | org-sipro | 01278f79-6752-45dd-81ac-cab73938d8fc | 423ab55c-914d-423e-bdf9-b822b7d2497b | A-05 | 62e35753-9dd4-44b8-8d60-e82ea9e0bc66 | W8-01 | Instalasi listrik (lampu, saklar, stop kontak) | mep | 8 | 16 | 4.0 | 48 | 50 | 2026-10-30 | 2026-11-02 | 0 | 3 | W8-01-C1 Semua titik diuji dan menyala True pending, W8-01-C2 Tidak ada kabel terbuka / sambungan liar True pending, W8-01-C3 MCB & grounding sesuai spesifikasi True pending | Lampu, Saklar, Stop kontak, Pengujian titik | site_engineer | site@sipro.co.id | project_manager | pm@sipro.co.id | blocked |  |  |  |  |  |  |  |  |  | 0 | 0 | 0 |  | 2026-09-05T19:55:51.102338+00:00 | 2026-09-05T19:55:51.193497+00:00 | W3-02, W6-01 |  |  | predecessor W3-02 'Jalur plumbing & conduit listrik tanam (sebelum plester)' belum diverifikasi (status: blocked)., predecessor W6-01 'Plafon (rangka hollow, gypsum, list)' belum diverifikasi (status: blocked). |  |  |  |  |  |
| 25332598-1529-4319-9b4a-8ebc442c86c7 | org-sipro | 01278f79-6752-45dd-81ac-cab73938d8fc | 423ab55c-914d-423e-bdf9-b822b7d2497b | A-05 | 62e35753-9dd4-44b8-8d60-e82ea9e0bc66 | W8-02 | Pengecatan interior, eksterior, plafon & lisplank | finishing | 8 | 17 | 5.0 | 51 | 53 | 2026-11-03 | 2026-11-05 | 7 | 3 | W8-02-C1 Dinding kering saat diuji kelembaban True pending, W8-02-C2 Cat rata minimal 2 lapis, tidak belang True pending, W8-02-C3 Tidak ada cipratan pada kusen/keramik  pending | Cat interior, Cat eksterior, Cat plafon, Cat lisplank | site_engineer | site@sipro.co.id | project_manager | pm@sipro.co.id | blocked |  |  |  |  |  |  |  |  |  | 0 | 0 | 0 |  | 2026-09-05T19:55:51.102338+00:00 | 2026-09-05T19:55:51.193995+00:00 | W5-02, W6-01 | True | HOLD POINT: dinding wajib kering (uji lembab) sebelum cat dasar. | predecessor W5-02 'Acian dinding' belum diverifikasi (status: blocked)., predecessor W6-01 'Plafon (rangka hollow, gypsum, list)' belum diverifikasi (status: blocked). | Acian minimal 7–14 hari agar dinding kering sebelum dicat |  |  |  |  |
| 71c193a3-4c2c-4071-9817-4356e3580f9a | org-sipro | 01278f79-6752-45dd-81ac-cab73938d8fc | 423ab55c-914d-423e-bdf9-b822b7d2497b | A-05 | 62e35753-9dd4-44b8-8d60-e82ea9e0bc66 | W8-03 | Pekerjaan luar (carport, dinding samping, taman) | lansekap | 8 | 18 | 3.0 | 54 | 54 | 2026-11-06 | 2026-11-06 | 0 | 2 | W8-03-C1 Carport rata, air tidak menggenang True pending, W8-03-C2 Area luar bersih dan rapi  pending | Carport, Dinding samping, Taman | site_engineer | site@sipro.co.id | project_manager | pm@sipro.co.id | blocked |  |  |  |  |  |  |  |  |  | 0 | 0 | 0 |  | 2026-09-05T19:55:51.102338+00:00 | 2026-09-05T19:55:51.194454+00:00 | W8-02 |  |  | predecessor W8-02 'Pengecatan interior, eksterior, plafon & lisplank' belum diverifikasi (status: blocked). |  |  |  |  |  |
| 828cebcc-6ea9-4fb8-ade7-3542b661d714 | org-sipro | 01278f79-6752-45dd-81ac-cab73938d8fc | 423ab55c-914d-423e-bdf9-b822b7d2497b | A-05 | 62e35753-9dd4-44b8-8d60-e82ea9e0bc66 | W9-01 | Pembersihan akhir & perbaikan defect | finishing | 9 | 19 | 3.0 | 55 | 58 | 2026-11-07 | 2026-11-11 | 0 | 3 | W9-01-C1 Semua temuan punch list sudah ditutup True pending, W9-01-C2 Bebas sisa material & puing True pending | Pembersihan akhir, Repair defect / punch list | site_engineer | site@sipro.co.id | project_manager | pm@sipro.co.id | blocked |  |  |  |  |  |  |  |  |  | 0 | 0 | 0 |  | 2026-09-05T19:55:51.102338+00:00 | 2026-09-05T19:55:51.194961+00:00 | W8-01, W8-02, W8-03 |  |  | predecessor W8-01 'Instalasi listrik (lampu, saklar, stop kontak)' belum diverifikasi (status: blocked)., predecessor W8-02 'Pengecatan interior, eksterior, plafon & lisplank' belum diverifikasi (status: blocked)., predecessor W8-03 'Pekerjaan luar (carport, dinding samping, taman)' belum diverifikasi (status: blocked). |  |  |  |  |  |
| 0263b6bf-a7c0-4748-aa26-6b801b618448 | org-sipro | 01278f79-6752-45dd-81ac-cab73938d8fc | 423ab55c-914d-423e-bdf9-b822b7d2497b | A-05 | 62e35753-9dd4-44b8-8d60-e82ea9e0bc66 | W9-02 | Final QC & siap akad / serah terima | finishing | 9 | 20 | 2.0 | 59 | 60 | 2026-11-12 | 2026-11-13 | 0 | 4 | W9-02-C1 Air & listrik berfungsi normal True pending, W9-02-C2 Tidak ada kebocoran atap/plumbing True pending, W9-02-C3 Kunci, dokumen, dan manual siap diserahkan True pending, W9-02-C4 Pembeli/QC menandatangani hasil final  pending | Final QC, Serah terima kunci & dokumen | site_engineer | site@sipro.co.id | project_manager | pm@sipro.co.id | blocked |  |  |  |  |  |  |  |  |  | 0 | 0 | 0 |  | 2026-09-05T19:55:51.102338+00:00 | 2026-09-05T19:55:51.195579+00:00 | W9-01 | True | HOLD POINT: unit tidak boleh dinyatakan siap serah terima sebelum Final QC lulus (air, listrik, bocor, kunci, dokumen). | predecessor W9-01 'Pembersihan akhir & perbaikan defect' belum diverifikasi (status: blocked). |  |  |  | True |  |
| 89e510f4-cd52-400d-a23c-b106dd47b2c9 | org-sipro | 01278f79-6752-45dd-81ac-cab73938d8fc | 42260ef9-87dd-4fb7-9c86-25fb1cefa7c6 | A-01 | c6ed95ac-15bc-4351-bf33-40036cccf04f | W1-01 | Pekerjaan persiapan (pembersihan, pengukuran, bowplank) | persiapan | 1 | 1 | 2.0 | 1 | 2 | 2026-07-22 | 2026-07-23 | 0 | 2 | W1-01-C1 As bangunan sesuai siteplan True pass, W1-01-C2 Elevasi lantai aman dari jalan & drainase True pass, W1-01-C3 Bowplank kuat, siku, dan tidak mudah bergeser  pass | Pembersihan lokasi, Pengukuran, Pemasangan bowplank | site_engineer | site@sipro.co.id | project_manager | pm@sipro.co.id | done | 4bac61ba-1be0-4d50-84b6-74ce3ed84540 2087f9d0f1ccb45c85b0399500e01be5f711d64c5fba01b996a15d7375e6f091 contoh-w1-01-1.png image/jpeg 10914 seed 2026-09-05T19:55:46.998524+00:00 CONTOH · unit A-01 · Contoh bukti: Pekerjaan persiapan (pembersihan, pengukuran (  seed 2026-09-05T19:55:46.999052+00:00, 416d2858-74d0-4c0a-ae26-ab41bd93b64e 148822ba3d40c36f15f1276c368f4d7f4625b59a57176374371f885c1378994a contoh-w1-01-2.png image/jpeg 11382 seed 2026-09-05T19:55:47.093724+00:00 CONTOH · unit A-01 · Contoh bukti: Pekerjaan persiapan (pembersihan, pengukuran (  seed 2026-09-05T19:55:47.094144+00:00 | Data awal demo: pekerjaan dikerjakan sesuai checklist mutu; foto bukti berlabel CONTOH. | 2026-07-23T09:30:00+00:00 submit site@sipro.co.id Seed data awal 2, 2026-07-23T09:30:00+00:00 verify pm@sipro.co.id Seed data awal | 2026-07-22T01:00:00+00:00 | 2026-07-23T09:30:00+00:00 | site@sipro.co.id | 2026-07-23T09:30:00+00:00 | pm@sipro.co.id | Diverifikasi pada penyiapan data awal. | 0 | 0 | 0 | e5f8608c-afba-4850-b715-7c3c9a075908 | 2026-09-05T19:55:46.707201+00:00 | 2026-09-05T19:55:47.094157+00:00 |  |  |  |  |  |  |  |  |  |
| 331ecaee-c0dd-448e-90f5-527a9baa17f8 | org-sipro | 01278f79-6752-45dd-81ac-cab73938d8fc | 42260ef9-87dd-4fb7-9c86-25fb1cefa7c6 | A-01 | c6ed95ac-15bc-4351-bf33-40036cccf04f | W1-02 | Pekerjaan tanah & pondasi (galian, urugan pasir, batu belah) | struktur | 1 | 2 | 8.0 | 3 | 7 | 2026-07-24 | 2026-07-29 | 0 | 3 | W1-02-C1 Kedalaman & lebar galian sesuai gambar True pass, W1-02-C2 Urugan pasir dipadatkan dan rata  pass, W1-02-C3 Pasangan batu belah terkunci penuh, spesi mengisi rongga True pass, W1-02-C4 Tidak ada bagian pondasi yang menggantung/ambles True pass | Galian pondasi, Urugan pasir, Pasangan batu belah | site_engineer | site@sipro.co.id | project_manager | pm@sipro.co.id | done | c89c8dda-344a-4563-ac0c-9a7015df4aed 417ca028cb60999276d45f71d0f497fe1eadec6f476b4da1b87fc6810cf7d584 contoh-w1-02-1.png image/jpeg 10841 seed 2026-09-05T19:55:47.117798+00:00 CONTOH · unit A-01 · Contoh bukti: Pekerjaan tanah & pondasi (galian, urugan pa (  seed 2026-09-05T19:55:47.118251+00:00, f8f97ba5-8477-4a66-a703-40976491f92d 4ba3ce24937ee86be3d0ca42b6270d9f1c54b1a5b2d72f20ed92f0227261c986 contoh-w1-02-2.png image/jpeg 11332 seed 2026-09-05T19:55:47.217744+00:00 CONTOH · unit A-01 · Contoh bukti: Pekerjaan tanah & pondasi (galian, urugan pa (  seed 2026-09-05T19:55:47.218383+00:00, 25e930b2-03ac-4bf8-bbc4-93f25bc3b72e 803ae72abe0517fc38b74ff31efeddbc598586bc0f561d58be63bc6907980b0a contoh-w1-02-3.png image/jpeg 10956 seed 2026-09-05T19:55:47.306427+00:00 CONTOH · unit A-01 · Contoh bukti: Pekerjaan tanah & pondasi (galian, urugan pa (  seed 2026-09-05T19:55:47.306924+00:00 | Data awal demo: pekerjaan dikerjakan sesuai checklist mutu; foto bukti berlabel CONTOH. | 2026-07-29T09:30:00+00:00 submit site@sipro.co.id Seed data awal 3, 2026-07-29T09:30:00+00:00 verify pm@sipro.co.id Seed data awal | 2026-07-24T01:00:00+00:00 | 2026-07-29T09:30:00+00:00 | site@sipro.co.id | 2026-07-29T09:30:00+00:00 | pm@sipro.co.id | Diverifikasi pada penyiapan data awal. | 0 | 0 | 0 |  | 2026-09-05T19:55:46.707201+00:00 | 2026-09-05T19:55:47.306936+00:00 | W1-01 | True | HOLD POINT: tidak boleh lanjut sloof sebelum pondasi benar-benar terkunci (pasangan batu belah penuh, tidak ada rongga). | predecessor W1-01 'Pekerjaan persiapan (pembersihan, pengukuran, bowplank)' belum diverifikasi (status: blocked). |  |  |  |  |  |
| 2a641db6-7e0f-483c-ae2b-f29df52d9382 | org-sipro | 01278f79-6752-45dd-81ac-cab73938d8fc | 42260ef9-87dd-4fb7-9c86-25fb1cefa7c6 | A-01 | c6ed95ac-15bc-4351-bf33-40036cccf04f | W2-01 | Pembesian & bekisting sloof + kolom praktis | struktur | 2 | 3 | 6.0 | 8 | 10 | 2026-07-30 | 2026-08-01 | 2 | 3 | W2-01-C1 Diameter & jumlah besi sesuai gambar True pass, W2-01-C2 Beton decking (selimut beton) terpasang True pass, W2-01-C3 Bekisting kokoh, lurus, tidak bocor  pass | Pembesian sloof, Pembesian kolom praktis, Pemasangan bekisting | site_engineer | site@sipro.co.id | project_manager | pm@sipro.co.id | done | 1381c8b2-d94d-4cd7-bf3f-e2a41fad8de0 1e33a19ca1372d4a6729f8c10674dbcfec64bad7e046ff449c5e28c06438f3bb contoh-w2-01-1.png image/jpeg 10898 seed 2026-09-05T19:55:47.403437+00:00 CONTOH · unit A-01 · Contoh bukti: Pembesian & bekisting sloof + kolom praktis (1  seed 2026-09-05T19:55:47.403885+00:00, 9c4d80a9-8dd0-48e5-9c90-f1b5b38b7524 2f8dd805863853432fd9ca8c107d24d5cda11a6810a793c81375b9ab502c6b3e contoh-w2-01-2.png image/jpeg 11381 seed 2026-09-05T19:55:47.502634+00:00 CONTOH · unit A-01 · Contoh bukti: Pembesian & bekisting sloof + kolom praktis (2  seed 2026-09-05T19:55:47.503126+00:00, 8a13ee5d-956f-4306-893a-39aa9b0ed65e 69e0660d6247a2e1e9fed5b838e3b173a1f6195f71218ddd8f4b0ee9c09b42cc contoh-w2-01-3.png image/jpeg 11008 seed 2026-09-05T19:55:47.596616+00:00 CONTOH · unit A-01 · Contoh bukti: Pembesian & bekisting sloof + kolom praktis (3  seed 2026-09-05T19:55:47.597110+00:00 | Data awal demo: pekerjaan dikerjakan sesuai checklist mutu; foto bukti berlabel CONTOH. | 2026-08-01T09:30:00+00:00 submit site@sipro.co.id Seed data awal 3, 2026-08-01T09:30:00+00:00 verify pm@sipro.co.id Seed data awal | 2026-07-30T01:00:00+00:00 | 2026-08-01T09:30:00+00:00 | site@sipro.co.id | 2026-08-01T09:30:00+00:00 | pm@sipro.co.id | Diverifikasi pada penyiapan data awal. | 0 | 0 | 0 |  | 2026-09-05T19:55:46.707201+00:00 | 2026-09-05T19:55:47.597124+00:00 | W1-02 |  |  | predecessor W1-02 'Pekerjaan tanah & pondasi (galian, urugan pasir, batu belah)' belum diverifikasi (status: blocked). | Pondasi batu kali minimal 1–2 hari sebelum sloof dikerjakan |  |  |  |  |
| 96bf6c5a-4fd1-4a53-a5e0-73484e832039 | org-sipro | 01278f79-6752-45dd-81ac-cab73938d8fc | 42260ef9-87dd-4fb7-9c86-25fb1cefa7c6 | A-01 | c6ed95ac-15bc-4351-bf33-40036cccf04f | W2-02 | Pengecoran sloof, kolom praktis & talang beton | struktur | 2 | 4 | 6.0 | 11 | 11 | 2026-08-03 | 2026-08-03 | 0 | 2 | W2-02-C1 Mutu/slump beton sesuai spesifikasi True pass, W2-02-C2 Pengecoran padat, tidak keropos/segregasi True pass, W2-02-C3 Tanggal & jam pengecoran dicatat True pass | Pengecoran sloof, Pengecoran kolom praktis, Talang beton | site_engineer | site@sipro.co.id | project_manager | pm@sipro.co.id | done | 5ffb1c71-0af1-4db5-8b84-53d459c91562 45545fabbf831068bebc3010d2da1ade27b96ba66012d9df82c6c25134518f93 contoh-w2-02-1.png image/jpeg 10760 seed 2026-09-05T19:55:47.620425+00:00 CONTOH · unit A-01 · Contoh bukti: Pengecoran sloof, kolom praktis & talang bet (  seed 2026-09-05T19:55:47.620891+00:00, d11fbec3-b811-4b97-9536-6d61bd9d7b9d 84b0d0da3a349b9a50ca79f5fdabad10e3b45486013ad8e629a0c2180a2a4119 contoh-w2-02-2.png image/jpeg 11255 seed 2026-09-05T19:55:47.715794+00:00 CONTOH · unit A-01 · Contoh bukti: Pengecoran sloof, kolom praktis & talang bet (  seed 2026-09-05T19:55:47.716281+00:00 | Data awal demo: pekerjaan dikerjakan sesuai checklist mutu; foto bukti berlabel CONTOH. | 2026-08-03T09:30:00+00:00 submit site@sipro.co.id Seed data awal 2, 2026-08-03T09:30:00+00:00 verify pm@sipro.co.id Seed data awal | 2026-08-03T01:00:00+00:00 | 2026-08-03T09:30:00+00:00 | site@sipro.co.id | 2026-08-03T09:30:00+00:00 | pm@sipro.co.id | Diverifikasi pada penyiapan data awal. | 0 | 0 | 0 |  | 2026-09-05T19:55:46.707201+00:00 | 2026-09-05T19:55:47.716294+00:00 | W2-01 |  |  | predecessor W2-01 'Pembesian & bekisting sloof + kolom praktis' belum diverifikasi (status: blocked). |  |  |  |  |  |
| 60c54ced-4f0e-49e2-bccb-c5d332a39cd1 | org-sipro | 01278f79-6752-45dd-81ac-cab73938d8fc | 42260ef9-87dd-4fb7-9c86-25fb1cefa7c6 | A-01 | c6ed95ac-15bc-4351-bf33-40036cccf04f | W2-03 | Curing beton & pembongkaran bekisting | struktur | 2 | 5 | 3.0 | 12 | 14 | 2026-08-04 | 2026-08-06 | 1 | 2 | W2-03-C1 Curing disiram/ditutup minimal 7 hari True pass, W2-03-C2 Tidak ada retak susut besar / keropos True pass, W2-03-C3 Tanggal pembongkaran bekisting dicatat  pass | Perawatan beton (curing), Buka bekisting samping | site_engineer | site@sipro.co.id | project_manager | pm@sipro.co.id | done | a7555f43-6826-4341-8393-0ec7f74c8841 cb4e3b61332882372fee6f7051495431403e877996874d3ae1462a67c4fa3b9b contoh-w2-03-1.png image/jpeg 10778 seed 2026-09-05T19:55:47.812998+00:00 CONTOH · unit A-01 · Contoh bukti: Curing beton & pembongkaran bekisting (1)  seed 2026-09-05T19:55:47.813465+00:00, d618894d-38a0-4329-9a7f-65c3cb8b9318 6e054e1e582e2fc2d994575f0d8d0bbac1b7df3c7e09022a4f045f64f2b69942 contoh-w2-03-2.png image/jpeg 11289 seed 2026-09-05T19:55:47.906067+00:00 CONTOH · unit A-01 · Contoh bukti: Curing beton & pembongkaran bekisting (2)  seed 2026-09-05T19:55:47.906620+00:00 | Data awal demo: pekerjaan dikerjakan sesuai checklist mutu; foto bukti berlabel CONTOH. | 2026-08-06T09:30:00+00:00 submit site@sipro.co.id Seed data awal 2, 2026-08-06T09:30:00+00:00 verify pm@sipro.co.id Seed data awal | 2026-08-04T01:00:00+00:00 | 2026-08-06T09:30:00+00:00 | site@sipro.co.id | 2026-08-06T09:30:00+00:00 | pm@sipro.co.id | Diverifikasi pada penyiapan data awal. | 0 | 0 | 0 |  | 2026-09-05T19:55:46.707201+00:00 | 2026-09-05T19:55:47.906634+00:00 | W2-02 | True | HOLD POINT: bekisting jangan dibuka/dibebani terlalu cepat — samping 24 jam, beban berat 7 hari, kuat optimal 28 hari. | predecessor W2-02 'Pengecoran sloof, kolom praktis & talang beton' belum diverifikasi (status: blocked). | Bekisting samping minimal 24 jam setelah pengecoran |  |  |  |  |
| 7ebf71cb-4231-4263-9e65-5a93d93015ac | org-sipro | 01278f79-6752-45dd-81ac-cab73938d8fc | 42260ef9-87dd-4fb7-9c86-25fb1cefa7c6 | A-01 | c6ed95ac-15bc-4351-bf33-40036cccf04f | W3-01 | Pasangan dinding bata merah | arsitektur | 3 | 6 | 8.0 | 15 | 21 | 2026-08-07 | 2026-08-14 | 3 | 3 | W3-01-C1 Pasangan tegak, lurus, dan siku True pass, W3-01-C2 Spesi terisi penuh (tidak ada rongga) True pass, W3-01-C3 Angkur kolom praktis terpasang tiap 6 lapis  pass | Pasangan bata merah, Kolom praktis lanjutan | site_engineer | site@sipro.co.id | project_manager | pm@sipro.co.id | done | c5370b4d-18f4-4834-a8cf-ac2b55c0c68b 124534d0a12ae05a50d84132ccc8f0c8571572e7c0a74205c6764d7f27508c90 contoh-w3-01-1.png image/jpeg 9897 seed 2026-09-05T19:55:48.007043+00:00 CONTOH · unit A-01 · Contoh bukti: Pasangan dinding bata merah (1)  seed 2026-09-05T19:55:48.007617+00:00, ac529455-658d-4461-a445-75f579a5629a c6c761457ace845a854ecdb6af3300692dacdff208c50b3f67334ac00e8963d8 contoh-w3-01-2.png image/jpeg 10403 seed 2026-09-05T19:55:48.105358+00:00 CONTOH · unit A-01 · Contoh bukti: Pasangan dinding bata merah (2)  seed 2026-09-05T19:55:48.106011+00:00, 434676ee-833e-4474-adc1-535c83f25943 67aaa3da9c48ba70ea42f2f222dcbab3f197dc439f0dd31df2215d864eb6e222 contoh-w3-01-3.png image/jpeg 10018 seed 2026-09-05T19:55:48.196573+00:00 CONTOH · unit A-01 · Contoh bukti: Pasangan dinding bata merah (3)  seed 2026-09-05T19:55:48.197115+00:00 | Data awal demo: pekerjaan dikerjakan sesuai checklist mutu; foto bukti berlabel CONTOH. | 2026-08-14T09:30:00+00:00 submit site@sipro.co.id Seed data awal 3, 2026-08-14T09:30:00+00:00 verify pm@sipro.co.id Seed data awal | 2026-08-07T01:00:00+00:00 | 2026-08-14T09:30:00+00:00 | site@sipro.co.id | 2026-08-14T09:30:00+00:00 | pm@sipro.co.id | Diverifikasi pada penyiapan data awal. | 0 | 0 | 0 |  | 2026-09-05T19:55:46.707201+00:00 | 2026-09-05T19:55:48.197126+00:00 | W2-03 |  |  | predecessor W2-03 'Curing beton & pembongkaran bekisting' belum diverifikasi (status: blocked). | Cor sloof minimal 3–7 hari sebelum pasangan bata dimulai |  |  |  |  |
| 09f6eea3-3ce5-4d2a-8c6b-c7ceb8d0c4af | org-sipro | 01278f79-6752-45dd-81ac-cab73938d8fc | 42260ef9-87dd-4fb7-9c86-25fb1cefa7c6 | A-01 | c6ed95ac-15bc-4351-bf33-40036cccf04f | W3-02 | Jalur plumbing & conduit listrik tanam (sebelum plester) | mep | 3 | 7 | 4.0 | 15 | 21 | 2026-08-07 | 2026-08-14 | 0 | 3 | W3-02-C1 Jalur air diuji tekan tanpa kebocoran True pass, W3-02-C2 Conduit utuh, tidak tertekuk/pecah True pass, W3-02-C3 Foto as-built jalur diambil sebelum ditutup True pass | Jalur air bersih & kotor tanam, Conduit listrik tanam | site_engineer | site@sipro.co.id | project_manager | pm@sipro.co.id | submitted | fb47c6ec-7c2c-44b0-83b6-9469ea269c91 10e9b30345275f1c6a81626d97c634aa4c49d302d8bac8fe39e19e0227a65e3f contoh-w3-02-1.png image/jpeg 10848 seed 2026-09-05T19:55:48.292171+00:00 CONTOH · unit A-01 · Contoh bukti: Jalur plumbing & conduit listrik tanam (sebe (  seed 2026-09-05T19:55:48.293097+00:00, b9191190-01c2-451d-bc27-3e614c5501f0 33e67a4bb734a6aafd7f4ce765a224ce82fd959d8379dc9e95461961248bddbe contoh-w3-02-2.png image/jpeg 11345 seed 2026-09-05T19:55:48.315946+00:00 CONTOH · unit A-01 · Contoh bukti: Jalur plumbing & conduit listrik tanam (sebe (  seed 2026-09-05T19:55:48.316489+00:00, 628eb1e1-fd51-4202-87b6-5d452d86a450 cd5a90eab462e6a2cf5c94f2270c67627e338574fdaf72aca0ad0fe1d9ac12c0 contoh-w3-02-3.png image/jpeg 10948 seed 2026-09-05T19:55:48.410753+00:00 CONTOH · unit A-01 · Contoh bukti: Jalur plumbing & conduit listrik tanam (sebe (  seed 2026-09-05T19:55:48.411221+00:00 | Data awal demo: pekerjaan dikerjakan sesuai checklist mutu; foto bukti berlabel CONTOH. | 2026-08-14T09:30:00+00:00 submit site@sipro.co.id Seed data awal 3 | 2026-08-07T01:00:00+00:00 | 2026-08-14T09:30:00+00:00 | site@sipro.co.id |  |  |  | 0 | 22 | 3 |  | 2026-09-05T19:55:46.707201+00:00 | 2026-09-05T20:15:26.746386+00:00 | W3-01 | True | HOLD POINT: jangan plester sebelum jalur plumbing & conduit tanam selesai, diuji, dan difoto sebagai as-built. | predecessor W3-01 'Pasangan dinding bata merah' belum diverifikasi (status: blocked). |  |  | 2026-09-05T20:15:26.746386+00:00 |  |  |
| c8a3a468-ffe7-4fa5-b3bb-69a1361adb92 | org-sipro | 01278f79-6752-45dd-81ac-cab73938d8fc | 42260ef9-87dd-4fb7-9c86-25fb1cefa7c6 | A-01 | c6ed95ac-15bc-4351-bf33-40036cccf04f | W4-01 | Ring balok & ring gevel | struktur | 4 | 8 | 6.0 | 22 | 24 | 2026-08-15 | 2026-08-18 | 0 | 2 | W4-01-C1 Pembesian ring balk sesuai gambar True pending, W4-01-C2 Pengecoran padat & elevasi rata True pending, W4-01-C3 Angkur kuda-kuda disiapkan  pending | Pembesian & bekisting ring balk, Pengecoran ring balk, Ring gevel | site_engineer | site@sipro.co.id | project_manager | pm@sipro.co.id | blocked |  |  |  |  |  |  |  |  |  | 0 | 18 | 3 |  | 2026-09-05T19:55:46.707201+00:00 | 2026-09-05T20:15:26.755292+00:00 | W3-01, W3-02 |  |  | predecessor W3-02 'Jalur plumbing & conduit listrik tanam (sebelum plester)' belum diverifikasi (status: submitted). |  |  | 2026-09-05T20:15:26.755292+00:00 |  |  |
| 059ccd4c-1338-4596-8338-4face858d3bc | org-sipro | 01278f79-6752-45dd-81ac-cab73938d8fc | 42260ef9-87dd-4fb7-9c86-25fb1cefa7c6 | A-01 | c6ed95ac-15bc-4351-bf33-40036cccf04f | W4-02 | Rangka atap baja ringan, penutup atap, lisplank | arsitektur | 4 | 9 | 8.0 | 25 | 27 | 2026-08-19 | 2026-08-21 | 3 | 4 | W4-02-C1 Jarak kuda-kuda & reng sesuai spesifikasi True pending, W4-02-C2 Sambungan/screw lengkap dan kencang  pending, W4-02-C3 Tes siram air: tidak ada kebocoran True pending, W4-02-C4 Kemiringan talang mengalir, tidak menggenang True pending | Rangka atap baja ringan, Genteng metal / atap spandek, Lisplank | site_engineer | site@sipro.co.id | project_manager | pm@sipro.co.id | blocked |  |  |  |  |  |  |  |  |  | 0 | 15 | 3 |  | 2026-09-05T19:55:46.707201+00:00 | 2026-09-05T20:15:26.762351+00:00 | W4-01 | True | HOLD POINT: jangan lanjut plafon bila atap masih bocor — wajib TES SIRAM AIR dan cek kemiringan talang. | predecessor W4-01 'Ring balok & ring gevel' belum diverifikasi (status: blocked). | Ring balok perlu mengeras minimal 3 hari sebelum dibebani rangka atap |  | 2026-09-05T20:15:26.762351+00:00 |  |  |
| 06a3dbd4-31f2-4acc-a3f7-5c6f97cfb32f | org-sipro | 01278f79-6752-45dd-81ac-cab73938d8fc | 42260ef9-87dd-4fb7-9c86-25fb1cefa7c6 | A-01 | c6ed95ac-15bc-4351-bf33-40036cccf04f | W5-01 | Plester dinding | arsitektur | 5 | 10 | 6.0 | 28 | 32 | 2026-08-22 | 2026-08-27 | 3 | 3 | W5-01-C1 Permukaan rata, tegak, tidak bergelombang True pending, W5-01-C2 Sudut siku dan tajam  pending, W5-01-C3 Tidak ada bagian kosong/berongga saat diketuk True pending | Plester dinding dalam, Plester dinding luar | site_engineer | site@sipro.co.id | project_manager | pm@sipro.co.id | blocked |  |  |  |  |  |  |  |  |  | 0 | 9 | 3 |  | 2026-09-05T19:55:46.707201+00:00 | 2026-09-05T20:15:26.770000+00:00 | W3-02, W4-02 |  |  | predecessor W3-02 'Jalur plumbing & conduit listrik tanam (sebelum plester)' belum diverifikasi (status: submitted)., predecessor W4-02 'Rangka atap baja ringan, penutup atap, lisplank' belum diverifikasi (status: blocked). | Mortar bata harus stabil 3–5 hari agar plester tidak retak rambut |  | 2026-09-05T20:15:26.770000+00:00 |  |  |

| id | org_id | project_id | unit_id | unit_code | schedule_id | step_code | name | work_category | week | order | weight | day_from | day_to | planned_start | planned_finish | wait_days | min_photos | checklist | tasks | assignee_role | assigned_to | verify_role | verifier_hint | status | evidence | note | history | started_at | submitted_at | submitted_by | verified_at | verified_by | verify_note | rework_count | late_days | escalation_level | task_id | created_at | updated_at | predecessors | hold_point | hold_note | gate_reasons | wait_reason | escalated_at | handover_gate | reminded_on |
| --- | --- | --- | --- | --- | --- | --- | --- | --- | --- | --- | --- | --- | --- | --- | --- | --- | --- | --- | --- | --- | --- | --- | --- | --- | --- | --- | --- | --- | --- | --- | --- | --- | --- | --- | --- | --- | --- | --- | --- | --- | --- | --- | --- | --- | --- | --- | --- |
| 19013933-339a-45d2-8ca9-94a65044c140 | org-sipro | 01278f79-6752-45dd-81ac-cab73938d8fc | 42260ef9-87dd-4fb7-9c86-25fb1cefa7c6 | A-01 | c6ed95ac-15bc-4351-bf33-40036cccf04f | W5-02 | Acian dinding | arsitektur | 5 | 11 | 4.0 | 33 | 35 | 2026-08-28 | 2026-08-31 | 3 | 2 | W5-02-C1 Acian halus, tanpa retak rambut True pending, W5-02-C2 Tidak ada bagian mengelupas / berdebu  pending | Acian dinding dalam, Acian dinding luar | site_engineer | site@sipro.co.id | project_manager | pm@sipro.co.id | blocked |  |  |  |  |  |  |  |  |  | 0 | 5 | 2 |  | 2026-09-05T19:55:46.707201+00:00 | 2026-09-05T20:15:26.776538+00:00 | W5-01 | True | HOLD POINT: jangan mengecat saat dinding masih basah — acian minimal 7–14 hari sebelum cat (risiko cat menggelembung, lembab, jamur). | predecessor W5-01 'Plester dinding' belum diverifikasi (status: blocked). | Plester perlu 2–3 hari sebelum diaci | 2026-09-05T20:15:26.776538+00:00 |  |  |
| d352f49f-0fab-43ee-8cb0-29372d07d7e8 | org-sipro | 01278f79-6752-45dd-81ac-cab73938d8fc | 42260ef9-87dd-4fb7-9c86-25fb1cefa7c6 | A-01 | c6ed95ac-15bc-4351-bf33-40036cccf04f | W6-01 | Plafon (rangka hollow, gypsum, list) | arsitektur | 6 | 12 | 5.0 | 36 | 38 | 2026-09-01 | 2026-09-03 | 0 | 2 | W6-01-C1 Rangka hollow rata & kuat (tidak melendut) True pending, W6-01-C2 Sambungan gypsum di-compound rapi  pending, W6-01-C3 List gypsum lurus & rapat ke dinding  pending | Rangka hollow, Pemasangan gypsum, List gypsum | site_engineer | site@sipro.co.id | project_manager | pm@sipro.co.id | blocked |  |  |  |  |  |  |  |  |  | 0 | 2 | 1 |  | 2026-09-05T19:55:46.707201+00:00 | 2026-09-05T20:15:26.785040+00:00 | W4-02 |  |  | predecessor W4-02 'Rangka atap baja ringan, penutup atap, lisplank' belum diverifikasi (status: blocked). |  | 2026-09-05T20:15:26.785040+00:00 |  |  |
| 22608e29-bdb9-47d3-b5bf-eb466c4b9016 | org-sipro | 01278f79-6752-45dd-81ac-cab73938d8fc | 42260ef9-87dd-4fb7-9c86-25fb1cefa7c6 | A-01 | c6ed95ac-15bc-4351-bf33-40036cccf04f | W6-02 | Kusen, daun pintu, jendela & kaca | arsitektur | 6 | 13 | 5.0 | 39 | 41 | 2026-09-04 | 2026-09-07 | 0 | 3 | W6-02-C1 Kusen tegak, terkunci, dan tidak goyang True pending, W6-02-C2 Pintu & jendela menutup rapat, kunci berfungsi True pending, W6-02-C3 Kaca tanpa gores/retak dan sealant rapi  pending | Kusen pintu, Daun pintu, Kusen jendela, Kaca | site_engineer | site@sipro.co.id | project_manager | pm@sipro.co.id | blocked |  |  |  |  |  |  |  |  |  | 0 | 0 | 0 |  | 2026-09-05T19:55:46.707201+00:00 | 2026-09-05T19:55:46.805361+00:00 | W5-02 |  |  | predecessor W5-02 'Acian dinding' belum diverifikasi (status: blocked). |  |  |  |  |
| 029c9d4a-f7ae-46ba-a574-d0f24d7354ee | org-sipro | 01278f79-6752-45dd-81ac-cab73938d8fc | 42260ef9-87dd-4fb7-9c86-25fb1cefa7c6 | A-01 | c6ed95ac-15bc-4351-bf33-40036cccf04f | W7-01 | Keramik lantai, dinding KM & backsplash dapur | finishing | 7 | 14 | 7.0 | 42 | 45 | 2026-09-08 | 2026-09-11 | 0 | 4 | W7-01-C1 Nat lurus, seragam, dan terisi penuh True pending, W7-01-C2 Tidak kopong saat diketuk True pending, W7-01-C3 Kemiringan lantai KM mengarah ke floor drain True pending | Keramik lantai utama, Keramik kamar mandi, Keramik dinding KM, Keramik backsplash dapur | site_engineer | site@sipro.co.id | project_manager | pm@sipro.co.id | blocked |  |  |  |  |  |  |  |  |  | 0 | 0 | 0 |  | 2026-09-05T19:55:46.707201+00:00 | 2026-09-05T19:55:46.805851+00:00 | W5-02, W6-01 |  |  | predecessor W5-02 'Acian dinding' belum diverifikasi (status: blocked)., predecessor W6-01 'Plafon (rangka hollow, gypsum, list)' belum diverifikasi (status: blocked). |  |  |  |  |
| 6b21db2a-57ed-4773-b726-24241a486c01 | org-sipro | 01278f79-6752-45dd-81ac-cab73938d8fc | 42260ef9-87dd-4fb7-9c86-25fb1cefa7c6 | A-01 | c6ed95ac-15bc-4351-bf33-40036cccf04f | W7-02 | Sanitasi & jalur air bersih (closet, kran, sink, septictank) | mep | 7 | 15 | 5.0 | 46 | 47 | 2026-09-12 | 2026-09-14 | 1 | 3 | W7-02-C1 Tes aliran air lancar di semua titik True pending, W7-02-C2 Tidak ada kebocoran pada sambungan True pending, W7-02-C3 Septictank & resapan sesuai spesifikasi  pending | Closet, Kran, Sink dapur, Septictank & resapan, Jalur air bersih | site_engineer | site@sipro.co.id | project_manager | pm@sipro.co.id | blocked |  |  |  |  |  |  |  |  |  | 0 | 0 | 0 |  | 2026-09-05T19:55:46.707201+00:00 | 2026-09-05T19:55:46.806387+00:00 | W7-01 |  |  | predecessor W7-01 'Keramik lantai, dinding KM & backsplash dapur' belum diverifikasi (status: blocked). | Nat keramik harus kering sebelum pemasangan sanitair |  |  |  |
| c7784361-707e-4579-89bb-53a4c5c93aa4 | org-sipro | 01278f79-6752-45dd-81ac-cab73938d8fc | 42260ef9-87dd-4fb7-9c86-25fb1cefa7c6 | A-01 | c6ed95ac-15bc-4351-bf33-40036cccf04f | W8-01 | Instalasi listrik (lampu, saklar, stop kontak) | mep | 8 | 16 | 4.0 | 48 | 50 | 2026-09-15 | 2026-09-17 | 0 | 3 | W8-01-C1 Semua titik diuji dan menyala True pending, W8-01-C2 Tidak ada kabel terbuka / sambungan liar True pending, W8-01-C3 MCB & grounding sesuai spesifikasi True pending | Lampu, Saklar, Stop kontak, Pengujian titik | site_engineer | site@sipro.co.id | project_manager | pm@sipro.co.id | blocked |  |  |  |  |  |  |  |  |  | 0 | 0 | 0 |  | 2026-09-05T19:55:46.707201+00:00 | 2026-09-05T19:55:48.414219+00:00 | W3-02, W6-01 |  |  | predecessor W3-02 'Jalur plumbing & conduit listrik tanam (sebelum plester)' belum diverifikasi (status: submitted)., predecessor W6-01 'Plafon (rangka hollow, gypsum, list)' belum diverifikasi (status: blocked). |  |  |  |  |
| 193339e0-61ae-439d-8565-ed61d02c564c | org-sipro | 01278f79-6752-45dd-81ac-cab73938d8fc | 42260ef9-87dd-4fb7-9c86-25fb1cefa7c6 | A-01 | c6ed95ac-15bc-4351-bf33-40036cccf04f | W8-02 | Pengecatan interior, eksterior, plafon & lisplank | finishing | 8 | 17 | 5.0 | 51 | 53 | 2026-09-18 | 2026-09-21 | 7 | 3 | W8-02-C1 Dinding kering saat diuji kelembaban True pending, W8-02-C2 Cat rata minimal 2 lapis, tidak belang True pending, W8-02-C3 Tidak ada cipratan pada kusen/keramik  pending | Cat interior, Cat eksterior, Cat plafon, Cat lisplank | site_engineer | site@sipro.co.id | project_manager | pm@sipro.co.id | blocked |  |  |  |  |  |  |  |  |  | 0 | 0 | 0 |  | 2026-09-05T19:55:46.707201+00:00 | 2026-09-05T19:55:46.807285+00:00 | W5-02, W6-01 | True | HOLD POINT: dinding wajib kering (uji lembab) sebelum cat dasar. | predecessor W5-02 'Acian dinding' belum diverifikasi (status: blocked)., predecessor W6-01 'Plafon (rangka hollow, gypsum, list)' belum diverifikasi (status: blocked). | Acian minimal 7–14 hari agar dinding kering sebelum dicat |  |  |  |
| 949ebc5f-34a8-4bca-a504-43694bc7517c | org-sipro | 01278f79-6752-45dd-81ac-cab73938d8fc | 42260ef9-87dd-4fb7-9c86-25fb1cefa7c6 | A-01 | c6ed95ac-15bc-4351-bf33-40036cccf04f | W8-03 | Pekerjaan luar (carport, dinding samping, taman) | lansekap | 8 | 18 | 3.0 | 54 | 54 | 2026-09-22 | 2026-09-22 | 0 | 2 | W8-03-C1 Carport rata, air tidak menggenang True pending, W8-03-C2 Area luar bersih dan rapi  pending | Carport, Dinding samping, Taman | site_engineer | site@sipro.co.id | project_manager | pm@sipro.co.id | blocked |  |  |  |  |  |  |  |  |  | 0 | 0 | 0 |  | 2026-09-05T19:55:46.707201+00:00 | 2026-09-05T19:55:46.807702+00:00 | W8-02 |  |  | predecessor W8-02 'Pengecatan interior, eksterior, plafon & lisplank' belum diverifikasi (status: blocked). |  |  |  |  |
| f967b695-1a46-454b-a6ef-0a24ae324a8c | org-sipro | 01278f79-6752-45dd-81ac-cab73938d8fc | 42260ef9-87dd-4fb7-9c86-25fb1cefa7c6 | A-01 | c6ed95ac-15bc-4351-bf33-40036cccf04f | W9-01 | Pembersihan akhir & perbaikan defect | finishing | 9 | 19 | 3.0 | 55 | 58 | 2026-09-23 | 2026-09-26 | 0 | 3 | W9-01-C1 Semua temuan punch list sudah ditutup True pending, W9-01-C2 Bebas sisa material & puing True pending | Pembersihan akhir, Repair defect / punch list | site_engineer | site@sipro.co.id | project_manager | pm@sipro.co.id | blocked |  |  |  |  |  |  |  |  |  | 0 | 0 | 0 |  | 2026-09-05T19:55:46.707201+00:00 | 2026-09-05T19:55:46.808252+00:00 | W8-01, W8-02, W8-03 |  |  | predecessor W8-01 'Instalasi listrik (lampu, saklar, stop kontak)' belum diverifikasi (status: blocked)., predecessor W8-02 'Pengecatan interior, eksterior, plafon & lisplank' belum diverifikasi (status: blocked)., predecessor W8-03 'Pekerjaan luar (carport, dinding samping, taman)' belum diverifikasi (status: blocked). |  |  |  |  |
| 9059df57-5b56-43bb-9f1c-3dddb061697d | org-sipro | 01278f79-6752-45dd-81ac-cab73938d8fc | 42260ef9-87dd-4fb7-9c86-25fb1cefa7c6 | A-01 | c6ed95ac-15bc-4351-bf33-40036cccf04f | W9-02 | Final QC & siap akad / serah terima | finishing | 9 | 20 | 2.0 | 59 | 60 | 2026-09-28 | 2026-09-29 | 0 | 4 | W9-02-C1 Air & listrik berfungsi normal True pending, W9-02-C2 Tidak ada kebocoran atap/plumbing True pending, W9-02-C3 Kunci, dokumen, dan manual siap diserahkan True pending, W9-02-C4 Pembeli/QC menandatangani hasil final  pending | Final QC, Serah terima kunci & dokumen | site_engineer | site@sipro.co.id | project_manager | pm@sipro.co.id | blocked |  |  |  |  |  |  |  |  |  | 0 | 0 | 0 |  | 2026-09-05T19:55:46.707201+00:00 | 2026-09-05T19:55:46.892247+00:00 | W9-01 | True | HOLD POINT: unit tidak boleh dinyatakan siap serah terima sebelum Final QC lulus (air, listrik, bocor, kunci, dokumen). | predecessor W9-01 'Pembersihan akhir & perbaikan defect' belum diverifikasi (status: blocked). |  |  | True |  |
| 266aa95e-d297-44f5-ae2d-5ce0f4419722 | org-sipro | 01278f79-6752-45dd-81ac-cab73938d8fc | da4f1455-d13a-4dfa-9201-48ec5ebed7e2 | A-04 | ebd2a234-fd3a-46bc-9cc1-1f8a8c4e1d41 | W1-01 | Pekerjaan persiapan (pembersihan, pengukuran, bowplank) | persiapan | 1 | 1 | 2.0 | 1 | 2 | 2026-08-29 | 2026-08-31 | 0 | 2 | W1-01-C1 As bangunan sesuai siteplan True pass, W1-01-C2 Elevasi lantai aman dari jalan & drainase True pass, W1-01-C3 Bowplank kuat, siku, dan tidak mudah bergeser  pass | Pembersihan lokasi, Pengukuran, Pemasangan bowplank | site_engineer | site@sipro.co.id | project_manager | pm@sipro.co.id | done | 00aa79a8-d33c-4fb5-8a36-2f7c9c66f719 2087f9d0f1ccb45c85b0399500e01be5f711d64c5fba01b996a15d7375e6f091 contoh-w1-01-1.png image/jpeg 10915 seed 2026-09-05T19:55:49.395282+00:00 CONTOH · unit A-04 · Contoh bukti: Pekerjaan persiapan (pembersihan, pengukuran (  seed 2026-09-05T19:55:49.395797+00:00, 490c3af2-ea95-4937-b99d-c908da2dc183 148822ba3d40c36f15f1276c368f4d7f4625b59a57176374371f885c1378994a contoh-w1-01-2.png image/jpeg 11397 seed 2026-09-05T19:55:49.494525+00:00 CONTOH · unit A-04 · Contoh bukti: Pekerjaan persiapan (pembersihan, pengukuran (  seed 2026-09-05T19:55:49.495382+00:00 | Data awal demo: pekerjaan dikerjakan sesuai checklist mutu; foto bukti berlabel CONTOH. | 2026-08-31T09:30:00+00:00 submit site@sipro.co.id Seed data awal 2, 2026-08-31T09:30:00+00:00 verify pm@sipro.co.id Seed data awal | 2026-08-29T01:00:00+00:00 | 2026-08-31T09:30:00+00:00 | site@sipro.co.id | 2026-08-31T09:30:00+00:00 | pm@sipro.co.id | Diverifikasi pada penyiapan data awal. | 0 | 0 | 0 | 56da31e5-4011-44aa-b3f2-9d726c2397d6 | 2026-09-05T19:55:49.207019+00:00 | 2026-09-05T19:55:49.495399+00:00 |  |  |  |  |  |  |  |  |
| 9692f028-4b1e-416b-af34-ff6d0dc0d208 | org-sipro | 01278f79-6752-45dd-81ac-cab73938d8fc | da4f1455-d13a-4dfa-9201-48ec5ebed7e2 | A-04 | ebd2a234-fd3a-46bc-9cc1-1f8a8c4e1d41 | W1-02 | Pekerjaan tanah & pondasi (galian, urugan pasir, batu belah) | struktur | 1 | 2 | 8.0 | 3 | 7 | 2026-09-01 | 2026-09-05 | 0 | 3 | W1-02-C1 Kedalaman & lebar galian sesuai gambar True pending, W1-02-C2 Urugan pasir dipadatkan dan rata  pending, W1-02-C3 Pasangan batu belah terkunci penuh, spesi mengisi rongga True pending, W1-02-C4 Tidak ada bagian pondasi yang menggantung/ambles True pending | Galian pondasi, Urugan pasir, Pasangan batu belah | site_engineer | site@sipro.co.id | project_manager | pm@sipro.co.id | ready |  |  |  |  |  |  |  |  |  | 0 | 0 | 0 | 895b1475-4452-49ea-9cb9-83ba76a6c07f | 2026-09-05T19:55:49.207019+00:00 | 2026-09-05T20:15:26.821958+00:00 | W1-01 | True | HOLD POINT: tidak boleh lanjut sloof sebelum pondasi benar-benar terkunci (pasangan batu belah penuh, tidak ada rongga). |  |  |  |  | 2026-09-05 |
| 2f2109c9-9977-4667-b493-53d46d19e6be | org-sipro | 01278f79-6752-45dd-81ac-cab73938d8fc | da4f1455-d13a-4dfa-9201-48ec5ebed7e2 | A-04 | ebd2a234-fd3a-46bc-9cc1-1f8a8c4e1d41 | W2-01 | Pembesian & bekisting sloof + kolom praktis | struktur | 2 | 3 | 6.0 | 8 | 10 | 2026-09-07 | 2026-09-09 | 2 | 3 | W2-01-C1 Diameter & jumlah besi sesuai gambar True pending, W2-01-C2 Beton decking (selimut beton) terpasang True pending, W2-01-C3 Bekisting kokoh, lurus, tidak bocor  pending | Pembesian sloof, Pembesian kolom praktis, Pemasangan bekisting | site_engineer | site@sipro.co.id | project_manager | pm@sipro.co.id | blocked |  |  |  |  |  |  |  |  |  | 0 | 0 | 0 |  | 2026-09-05T19:55:49.207019+00:00 | 2026-09-05T20:15:26.819717+00:00 | W1-02 |  |  | predecessor W1-02 'Pekerjaan tanah & pondasi (galian, urugan pasir, batu belah)' belum diverifikasi (status: ready). | Pondasi batu kali minimal 1–2 hari sebelum sloof dikerjakan |  |  |  |
| babaf729-6c84-4c85-948d-7971b129c00a | org-sipro | 01278f79-6752-45dd-81ac-cab73938d8fc | da4f1455-d13a-4dfa-9201-48ec5ebed7e2 | A-04 | ebd2a234-fd3a-46bc-9cc1-1f8a8c4e1d41 | W2-02 | Pengecoran sloof, kolom praktis & talang beton | struktur | 2 | 4 | 6.0 | 11 | 11 | 2026-09-10 | 2026-09-10 | 0 | 2 | W2-02-C1 Mutu/slump beton sesuai spesifikasi True pending, W2-02-C2 Pengecoran padat, tidak keropos/segregasi True pending, W2-02-C3 Tanggal & jam pengecoran dicatat True pending | Pengecoran sloof, Pengecoran kolom praktis, Talang beton | site_engineer | site@sipro.co.id | project_manager | pm@sipro.co.id | blocked |  |  |  |  |  |  |  |  |  | 0 | 0 | 0 |  | 2026-09-05T19:55:49.207019+00:00 | 2026-09-05T19:55:49.218833+00:00 | W2-01 |  |  | predecessor W2-01 'Pembesian & bekisting sloof + kolom praktis' belum diverifikasi (status: blocked). |  |  |  |  |
| 8458270b-b3e5-4901-aae7-1a811b334d2f | org-sipro | 01278f79-6752-45dd-81ac-cab73938d8fc | da4f1455-d13a-4dfa-9201-48ec5ebed7e2 | A-04 | ebd2a234-fd3a-46bc-9cc1-1f8a8c4e1d41 | W2-03 | Curing beton & pembongkaran bekisting | struktur | 2 | 5 | 3.0 | 12 | 14 | 2026-09-11 | 2026-09-14 | 1 | 2 | W2-03-C1 Curing disiram/ditutup minimal 7 hari True pending, W2-03-C2 Tidak ada retak susut besar / keropos True pending, W2-03-C3 Tanggal pembongkaran bekisting dicatat  pending | Perawatan beton (curing), Buka bekisting samping | site_engineer | site@sipro.co.id | project_manager | pm@sipro.co.id | blocked |  |  |  |  |  |  |  |  |  | 0 | 0 | 0 |  | 2026-09-05T19:55:49.207019+00:00 | 2026-09-05T19:55:49.219302+00:00 | W2-02 | True | HOLD POINT: bekisting jangan dibuka/dibebani terlalu cepat — samping 24 jam, beban berat 7 hari, kuat optimal 28 hari. | predecessor W2-02 'Pengecoran sloof, kolom praktis & talang beton' belum diverifikasi (status: blocked). | Bekisting samping minimal 24 jam setelah pengecoran |  |  |  |
| 89be524f-5bcb-4fda-8e84-55c127ee69a5 | org-sipro | 01278f79-6752-45dd-81ac-cab73938d8fc | da4f1455-d13a-4dfa-9201-48ec5ebed7e2 | A-04 | ebd2a234-fd3a-46bc-9cc1-1f8a8c4e1d41 | W3-01 | Pasangan dinding bata merah | arsitektur | 3 | 6 | 8.0 | 15 | 21 | 2026-09-15 | 2026-09-22 | 3 | 3 | W3-01-C1 Pasangan tegak, lurus, dan siku True pending, W3-01-C2 Spesi terisi penuh (tidak ada rongga) True pending, W3-01-C3 Angkur kolom praktis terpasang tiap 6 lapis  pending | Pasangan bata merah, Kolom praktis lanjutan | site_engineer | site@sipro.co.id | project_manager | pm@sipro.co.id | blocked |  |  |  |  |  |  |  |  |  | 0 | 0 | 0 |  | 2026-09-05T19:55:49.207019+00:00 | 2026-09-05T19:55:49.219747+00:00 | W2-03 |  |  | predecessor W2-03 'Curing beton & pembongkaran bekisting' belum diverifikasi (status: blocked). | Cor sloof minimal 3–7 hari sebelum pasangan bata dimulai |  |  |  |
| 03b3ecee-f7e2-4e71-9117-d0e0c9751718 | org-sipro | 01278f79-6752-45dd-81ac-cab73938d8fc | da4f1455-d13a-4dfa-9201-48ec5ebed7e2 | A-04 | ebd2a234-fd3a-46bc-9cc1-1f8a8c4e1d41 | W3-02 | Jalur plumbing & conduit listrik tanam (sebelum plester) | mep | 3 | 7 | 4.0 | 15 | 21 | 2026-09-15 | 2026-09-22 | 0 | 3 | W3-02-C1 Jalur air diuji tekan tanpa kebocoran True pending, W3-02-C2 Conduit utuh, tidak tertekuk/pecah True pending, W3-02-C3 Foto as-built jalur diambil sebelum ditutup True pending | Jalur air bersih & kotor tanam, Conduit listrik tanam | site_engineer | site@sipro.co.id | project_manager | pm@sipro.co.id | blocked |  |  |  |  |  |  |  |  |  | 0 | 0 | 0 |  | 2026-09-05T19:55:49.207019+00:00 | 2026-09-05T19:55:49.220178+00:00 | W3-01 | True | HOLD POINT: jangan plester sebelum jalur plumbing & conduit tanam selesai, diuji, dan difoto sebagai as-built. | predecessor W3-01 'Pasangan dinding bata merah' belum diverifikasi (status: blocked). |  |  |  |  |
| 71be419b-94ae-4854-b6ed-ea3500b804cd | org-sipro | 01278f79-6752-45dd-81ac-cab73938d8fc | da4f1455-d13a-4dfa-9201-48ec5ebed7e2 | A-04 | ebd2a234-fd3a-46bc-9cc1-1f8a8c4e1d41 | W4-01 | Ring balok & ring gevel | struktur | 4 | 8 | 6.0 | 22 | 24 | 2026-09-23 | 2026-09-25 | 0 | 2 | W4-01-C1 Pembesian ring balk sesuai gambar True pending, W4-01-C2 Pengecoran padat & elevasi rata True pending, W4-01-C3 Angkur kuda-kuda disiapkan  pending | Pembesian & bekisting ring balk, Pengecoran ring balk, Ring gevel | site_engineer | site@sipro.co.id | project_manager | pm@sipro.co.id | blocked |  |  |  |  |  |  |  |  |  | 0 | 0 | 0 |  | 2026-09-05T19:55:49.207019+00:00 | 2026-09-05T19:55:49.220684+00:00 | W3-01, W3-02 |  |  | predecessor W3-01 'Pasangan dinding bata merah' belum diverifikasi (status: blocked)., predecessor W3-02 'Jalur plumbing & conduit listrik tanam (sebelum plester)' belum diverifikasi (status: blocked). |  |  |  |  |
| 92d8421d-5c85-4a8d-ad21-ce81213e2005 | org-sipro | 01278f79-6752-45dd-81ac-cab73938d8fc | da4f1455-d13a-4dfa-9201-48ec5ebed7e2 | A-04 | ebd2a234-fd3a-46bc-9cc1-1f8a8c4e1d41 | W4-02 | Rangka atap baja ringan, penutup atap, lisplank | arsitektur | 4 | 9 | 8.0 | 25 | 27 | 2026-09-26 | 2026-09-29 | 3 | 4 | W4-02-C1 Jarak kuda-kuda & reng sesuai spesifikasi True pending, W4-02-C2 Sambungan/screw lengkap dan kencang  pending, W4-02-C3 Tes siram air: tidak ada kebocoran True pending, W4-02-C4 Kemiringan talang mengalir, tidak menggenang True pending | Rangka atap baja ringan, Genteng metal / atap spandek, Lisplank | site_engineer | site@sipro.co.id | project_manager | pm@sipro.co.id | blocked |  |  |  |  |  |  |  |  |  | 0 | 0 | 0 |  | 2026-09-05T19:55:49.207019+00:00 | 2026-09-05T19:55:49.221160+00:00 | W4-01 | True | HOLD POINT: jangan lanjut plafon bila atap masih bocor — wajib TES SIRAM AIR dan cek kemiringan talang. | predecessor W4-01 'Ring balok & ring gevel' belum diverifikasi (status: blocked). | Ring balok perlu mengeras minimal 3 hari sebelum dibebani rangka atap |  |  |  |
| 49b7ac20-d9ef-48d4-818b-add5544154ce | org-sipro | 01278f79-6752-45dd-81ac-cab73938d8fc | da4f1455-d13a-4dfa-9201-48ec5ebed7e2 | A-04 | ebd2a234-fd3a-46bc-9cc1-1f8a8c4e1d41 | W5-01 | Plester dinding | arsitektur | 5 | 10 | 6.0 | 28 | 32 | 2026-09-30 | 2026-10-05 | 3 | 3 | W5-01-C1 Permukaan rata, tegak, tidak bergelombang True pending, W5-01-C2 Sudut siku dan tajam  pending, W5-01-C3 Tidak ada bagian kosong/berongga saat diketuk True pending | Plester dinding dalam, Plester dinding luar | site_engineer | site@sipro.co.id | project_manager | pm@sipro.co.id | blocked |  |  |  |  |  |  |  |  |  | 0 | 0 | 0 |  | 2026-09-05T19:55:49.207019+00:00 | 2026-09-05T19:55:49.221663+00:00 | W3-02, W4-02 |  |  | predecessor W3-02 'Jalur plumbing & conduit listrik tanam (sebelum plester)' belum diverifikasi (status: blocked)., predecessor W4-02 'Rangka atap baja ringan, penutup atap, lisplank' belum diverifikasi (status: blocked). | Mortar bata harus stabil 3–5 hari agar plester tidak retak rambut |  |  |  |
| 4709b2d4-816d-4427-8759-42feed64a88e | org-sipro | 01278f79-6752-45dd-81ac-cab73938d8fc | da4f1455-d13a-4dfa-9201-48ec5ebed7e2 | A-04 | ebd2a234-fd3a-46bc-9cc1-1f8a8c4e1d41 | W5-02 | Acian dinding | arsitektur | 5 | 11 | 4.0 | 33 | 35 | 2026-10-06 | 2026-10-08 | 3 | 2 | W5-02-C1 Acian halus, tanpa retak rambut True pending, W5-02-C2 Tidak ada bagian mengelupas / berdebu  pending | Acian dinding dalam, Acian dinding luar | site_engineer | site@sipro.co.id | project_manager | pm@sipro.co.id | blocked |  |  |  |  |  |  |  |  |  | 0 | 0 | 0 |  | 2026-09-05T19:55:49.207019+00:00 | 2026-09-05T19:55:49.222087+00:00 | W5-01 | True | HOLD POINT: jangan mengecat saat dinding masih basah — acian minimal 7–14 hari sebelum cat (risiko cat menggelembung, lembab, jamur). | predecessor W5-01 'Plester dinding' belum diverifikasi (status: blocked). | Plester perlu 2–3 hari sebelum diaci |  |  |  |
| f4f5e4f3-b5dd-44ba-bbdf-9b2b4bace2f4 | org-sipro | 01278f79-6752-45dd-81ac-cab73938d8fc | da4f1455-d13a-4dfa-9201-48ec5ebed7e2 | A-04 | ebd2a234-fd3a-46bc-9cc1-1f8a8c4e1d41 | W6-01 | Plafon (rangka hollow, gypsum, list) | arsitektur | 6 | 12 | 5.0 | 36 | 38 | 2026-10-09 | 2026-10-12 | 0 | 2 | W6-01-C1 Rangka hollow rata & kuat (tidak melendut) True pending, W6-01-C2 Sambungan gypsum di-compound rapi  pending, W6-01-C3 List gypsum lurus & rapat ke dinding  pending | Rangka hollow, Pemasangan gypsum, List gypsum | site_engineer | site@sipro.co.id | project_manager | pm@sipro.co.id | blocked |  |  |  |  |  |  |  |  |  | 0 | 0 | 0 |  | 2026-09-05T19:55:49.207019+00:00 | 2026-09-05T19:55:49.222552+00:00 | W4-02 |  |  | predecessor W4-02 'Rangka atap baja ringan, penutup atap, lisplank' belum diverifikasi (status: blocked). |  |  |  |  |
| 28776e7c-cd85-41e0-9d04-6661bf1b49c9 | org-sipro | 01278f79-6752-45dd-81ac-cab73938d8fc | da4f1455-d13a-4dfa-9201-48ec5ebed7e2 | A-04 | ebd2a234-fd3a-46bc-9cc1-1f8a8c4e1d41 | W6-02 | Kusen, daun pintu, jendela & kaca | arsitektur | 6 | 13 | 5.0 | 39 | 41 | 2026-10-13 | 2026-10-15 | 0 | 3 | W6-02-C1 Kusen tegak, terkunci, dan tidak goyang True pending, W6-02-C2 Pintu & jendela menutup rapat, kunci berfungsi True pending, W6-02-C3 Kaca tanpa gores/retak dan sealant rapi  pending | Kusen pintu, Daun pintu, Kusen jendela, Kaca | site_engineer | site@sipro.co.id | project_manager | pm@sipro.co.id | blocked |  |  |  |  |  |  |  |  |  | 0 | 0 | 0 |  | 2026-09-05T19:55:49.207019+00:00 | 2026-09-05T19:55:49.223008+00:00 | W5-02 |  |  | predecessor W5-02 'Acian dinding' belum diverifikasi (status: blocked). |  |  |  |  |
| 760c80c3-ddaf-4c4f-8b37-15f94a141a54 | org-sipro | 01278f79-6752-45dd-81ac-cab73938d8fc | da4f1455-d13a-4dfa-9201-48ec5ebed7e2 | A-04 | ebd2a234-fd3a-46bc-9cc1-1f8a8c4e1d41 | W7-01 | Keramik lantai, dinding KM & backsplash dapur | finishing | 7 | 14 | 7.0 | 42 | 45 | 2026-10-16 | 2026-10-20 | 0 | 4 | W7-01-C1 Nat lurus, seragam, dan terisi penuh True pending, W7-01-C2 Tidak kopong saat diketuk True pending, W7-01-C3 Kemiringan lantai KM mengarah ke floor drain True pending | Keramik lantai utama, Keramik kamar mandi, Keramik dinding KM, Keramik backsplash dapur | site_engineer | site@sipro.co.id | project_manager | pm@sipro.co.id | blocked |  |  |  |  |  |  |  |  |  | 0 | 0 | 0 |  | 2026-09-05T19:55:49.207019+00:00 | 2026-09-05T19:55:49.223470+00:00 | W5-02, W6-01 |  |  | predecessor W5-02 'Acian dinding' belum diverifikasi (status: blocked)., predecessor W6-01 'Plafon (rangka hollow, gypsum, list)' belum diverifikasi (status: blocked). |  |  |  |  |
| ac5680bc-42cb-4360-ba03-bf1ba53050ae | org-sipro | 01278f79-6752-45dd-81ac-cab73938d8fc | da4f1455-d13a-4dfa-9201-48ec5ebed7e2 | A-04 | ebd2a234-fd3a-46bc-9cc1-1f8a8c4e1d41 | W7-02 | Sanitasi & jalur air bersih (closet, kran, sink, septictank) | mep | 7 | 15 | 5.0 | 46 | 47 | 2026-10-21 | 2026-10-22 | 1 | 3 | W7-02-C1 Tes aliran air lancar di semua titik True pending, W7-02-C2 Tidak ada kebocoran pada sambungan True pending, W7-02-C3 Septictank & resapan sesuai spesifikasi  pending | Closet, Kran, Sink dapur, Septictank & resapan, Jalur air bersih | site_engineer | site@sipro.co.id | project_manager | pm@sipro.co.id | blocked |  |  |  |  |  |  |  |  |  | 0 | 0 | 0 |  | 2026-09-05T19:55:49.207019+00:00 | 2026-09-05T19:55:49.223842+00:00 | W7-01 |  |  | predecessor W7-01 'Keramik lantai, dinding KM & backsplash dapur' belum diverifikasi (status: blocked). | Nat keramik harus kering sebelum pemasangan sanitair |  |  |  |
| 39b59f2a-8e60-4386-8eef-47c2c8977b1c | org-sipro | 01278f79-6752-45dd-81ac-cab73938d8fc | da4f1455-d13a-4dfa-9201-48ec5ebed7e2 | A-04 | ebd2a234-fd3a-46bc-9cc1-1f8a8c4e1d41 | W8-01 | Instalasi listrik (lampu, saklar, stop kontak) | mep | 8 | 16 | 4.0 | 48 | 50 | 2026-10-23 | 2026-10-26 | 0 | 3 | W8-01-C1 Semua titik diuji dan menyala True pending, W8-01-C2 Tidak ada kabel terbuka / sambungan liar True pending, W8-01-C3 MCB & grounding sesuai spesifikasi True pending | Lampu, Saklar, Stop kontak, Pengujian titik | site_engineer | site@sipro.co.id | project_manager | pm@sipro.co.id | blocked |  |  |  |  |  |  |  |  |  | 0 | 0 | 0 |  | 2026-09-05T19:55:49.207019+00:00 | 2026-09-05T19:55:49.224304+00:00 | W3-02, W6-01 |  |  | predecessor W3-02 'Jalur plumbing & conduit listrik tanam (sebelum plester)' belum diverifikasi (status: blocked)., predecessor W6-01 'Plafon (rangka hollow, gypsum, list)' belum diverifikasi (status: blocked). |  |  |  |  |
| b69a377f-f0a2-4057-a7e2-469dcd60c0c6 | org-sipro | 01278f79-6752-45dd-81ac-cab73938d8fc | da4f1455-d13a-4dfa-9201-48ec5ebed7e2 | A-04 | ebd2a234-fd3a-46bc-9cc1-1f8a8c4e1d41 | W8-02 | Pengecatan interior, eksterior, plafon & lisplank | finishing | 8 | 17 | 5.0 | 51 | 53 | 2026-10-27 | 2026-10-29 | 7 | 3 | W8-02-C1 Dinding kering saat diuji kelembaban True pending, W8-02-C2 Cat rata minimal 2 lapis, tidak belang True pending, W8-02-C3 Tidak ada cipratan pada kusen/keramik  pending | Cat interior, Cat eksterior, Cat plafon, Cat lisplank | site_engineer | site@sipro.co.id | project_manager | pm@sipro.co.id | blocked |  |  |  |  |  |  |  |  |  | 0 | 0 | 0 |  | 2026-09-05T19:55:49.207019+00:00 | 2026-09-05T19:55:49.224859+00:00 | W5-02, W6-01 | True | HOLD POINT: dinding wajib kering (uji lembab) sebelum cat dasar. | predecessor W5-02 'Acian dinding' belum diverifikasi (status: blocked)., predecessor W6-01 'Plafon (rangka hollow, gypsum, list)' belum diverifikasi (status: blocked). | Acian minimal 7–14 hari agar dinding kering sebelum dicat |  |  |  |
| 6e4670fe-461e-4fc4-8ef6-c1add75c6504 | org-sipro | 01278f79-6752-45dd-81ac-cab73938d8fc | da4f1455-d13a-4dfa-9201-48ec5ebed7e2 | A-04 | ebd2a234-fd3a-46bc-9cc1-1f8a8c4e1d41 | W8-03 | Pekerjaan luar (carport, dinding samping, taman) | lansekap | 8 | 18 | 3.0 | 54 | 54 | 2026-10-30 | 2026-10-30 | 0 | 2 | W8-03-C1 Carport rata, air tidak menggenang True pending, W8-03-C2 Area luar bersih dan rapi  pending | Carport, Dinding samping, Taman | site_engineer | site@sipro.co.id | project_manager | pm@sipro.co.id | blocked |  |  |  |  |  |  |  |  |  | 0 | 0 | 0 |  | 2026-09-05T19:55:49.207019+00:00 | 2026-09-05T19:55:49.225385+00:00 | W8-02 |  |  | predecessor W8-02 'Pengecatan interior, eksterior, plafon & lisplank' belum diverifikasi (status: blocked). |  |  |  |  |
| be5185ef-2c0e-4989-b065-9f1259f96f23 | org-sipro | 01278f79-6752-45dd-81ac-cab73938d8fc | da4f1455-d13a-4dfa-9201-48ec5ebed7e2 | A-04 | ebd2a234-fd3a-46bc-9cc1-1f8a8c4e1d41 | W9-01 | Pembersihan akhir & perbaikan defect | finishing | 9 | 19 | 3.0 | 55 | 58 | 2026-10-31 | 2026-11-04 | 0 | 3 | W9-01-C1 Semua temuan punch list sudah ditutup True pending, W9-01-C2 Bebas sisa material & puing True pending | Pembersihan akhir, Repair defect / punch list | site_engineer | site@sipro.co.id | project_manager | pm@sipro.co.id | blocked |  |  |  |  |  |  |  |  |  | 0 | 0 | 0 |  | 2026-09-05T19:55:49.207019+00:00 | 2026-09-05T19:55:49.225935+00:00 | W8-01, W8-02, W8-03 |  |  | predecessor W8-01 'Instalasi listrik (lampu, saklar, stop kontak)' belum diverifikasi (status: blocked)., predecessor W8-02 'Pengecatan interior, eksterior, plafon & lisplank' belum diverifikasi (status: blocked)., predecessor W8-03 'Pekerjaan luar (carport, dinding samping, taman)' belum diverifikasi (status: blocked). |  |  |  |  |
| a29bce41-2320-4149-8c2c-dd73e2155c57 | org-sipro | 01278f79-6752-45dd-81ac-cab73938d8fc | da4f1455-d13a-4dfa-9201-48ec5ebed7e2 | A-04 | ebd2a234-fd3a-46bc-9cc1-1f8a8c4e1d41 | W9-02 | Final QC & siap akad / serah terima | finishing | 9 | 20 | 2.0 | 59 | 60 | 2026-11-05 | 2026-11-06 | 0 | 4 | W9-02-C1 Air & listrik berfungsi normal True pending, W9-02-C2 Tidak ada kebocoran atap/plumbing True pending, W9-02-C3 Kunci, dokumen, dan manual siap diserahkan True pending, W9-02-C4 Pembeli/QC menandatangani hasil final  pending | Final QC, Serah terima kunci & dokumen | site_engineer | site@sipro.co.id | project_manager | pm@sipro.co.id | blocked |  |  |  |  |  |  |  |  |  | 0 | 0 | 0 |  | 2026-09-05T19:55:49.207019+00:00 | 2026-09-05T19:55:49.226435+00:00 | W9-01 | True | HOLD POINT: unit tidak boleh dinyatakan siap serah terima sebelum Final QC lulus (air, listrik, bocor, kunci, dokumen). | predecessor W9-01 'Pembersihan akhir & perbaikan defect' belum diverifikasi (status: blocked). |  |  | True |  |

Links (id, org_id, platform, campaign_id, adset_id, ad_id, date, spend, impressions, clicks, leads_platform, currency, campaign_name, adset_name, ad_name, campaign_external_id, source, import_id, created_by, created_at, updated_by, updated_at, revisions, history, demo_batch):
- 340e9948-dd5f-4ad0-9832-bc5205f2cfc4 org-sipro google 8f270bce-d4d3-42a5-9b94-2fe58d46099b 2026-09-01 975000 14700 293 3 IDR harmony-google-brand 9911002233 manual seed 2026-09-05T19:55:50.702725+00:00 seed 2026-09-05T19:55:50.702725+00:00 0 fase43
- 12166b32-fbf7-4132-9a3d-d8b44772b650 org-sipro google 8f270bce-d4d3-42a5-9b94-2fe58d46099b 2026-09-02 920000 13800 282 5 IDR harmony-google-brand 9911002233 manual seed 2026-09-05T19:55:50.701212+00:00 seed 2026-09-05T19:55:50.701212+00:00 0 fase43
- 85aa2e66-5584-4e57-a1b4-49df88420e57 org-sipro google 8f270bce-d4d3-42a5-9b94-2fe58d46099b 2026-09-03 865000 12900 271 4 IDR harmony-google-brand 9911002233 manual seed 2026-09-05T19:55:50.699580+00:00 seed 2026-09-05T19:55:50.699580+00:00 0 fase43
- cabbe03c-390d-47c1-b375-96b89325d5b7 org-sipro google 8f270bce-d4d3-42a5-9b94-2fe58d46099b 2026-09-04 810000 12000 260 3 IDR harmony-google-brand 9911002233 manual seed 2026-09-05T19:55:50.697812+00:00 seed 2026-09-05T19:55:50.697812+00:00 0 fase43
- 46b682af-df42-4937-9a8f-dec4ed3fd8e0 org-sipro meta 7eeadd04-aaf1-434a-9014-69923983c1f1 2026-08-28 1615000 13800 260 4 IDR cluster-a-meta 23851000000001 manual seed 2026-09-05T19:55:50.692136+00:00 seed 2026-09-05T19:55:50.692136+00:00 0 fase43
- 678f7348-2e51-4d7b-80c6-1bc93bed4b6e org-sipro meta 7eeadd04-aaf1-434a-9014-69923983c1f1 2026-08-29 1560000 12900 326 3 IDR cluster-a-meta 23851000000001 manual seed 2026-09-05T19:55:50.614464+00:00 seed 2026-09-05T19:55:50.614464+00:00 0 fase43
- b7913b87-5607-4dfc-a9f0-efb100ee432d org-sipro meta 7eeadd04-aaf1-434a-9014-69923983c1f1 2026-08-30 1505000 12000 315 5 IDR cluster-a-meta 23851000000001 manual seed 2026-09-05T19:55:50.613022+00:00 seed 2026-09-05T19:55:50.613022+00:00 0 fase43
- 5c7245ec-f74e-445d-a527-4a83dc85cbe0 org-sipro meta 7eeadd04-aaf1-434a-9014-69923983c1f1 2026-08-31 1450000 15600 304 4 IDR cluster-a-meta 23851000000001 manual seed 2026-09-05T19:55:50.611456+00:00 seed 2026-09-05T19:55:50.611456+00:00 0 fase43
- 84fa2043-221f-4418-8f5e-84a70da9113a org-sipro meta 7eeadd04-aaf1-434a-9014-69923983c1f1 2026-09-01 1615000 14700 293 3 IDR cluster-a-meta 23851000000001 manual seed 2026-09-05T19:55:50.609758+00:00 seed 2026-09-05T19:55:50.609758+00:00 0 fase43
- 13df1afb-1b73-498a-929d-9a2b329c2f74 org-sipro meta 7eeadd04-aaf1-434a-9014-69923983c1f1 2026-09-02 1560000 13800 282 5 IDR cluster-a-meta 23851000000001 manual seed 2026-09-05T19:55:50.608300+00:00 seed 2026-09-05T19:55:50.608300+00:00 0 fase43
- 84069522-fbae-4017-bc2e-e8201848383c org-sipro meta 7eeadd04-aaf1-434a-9014-69923983c1f1 2026-09-03 1505000 12900 271 4 IDR cluster-a-meta 23851000000001 manual seed 2026-09-05T19:55:50.606687+00:00 seed 2026-09-05T19:55:50.606687+00:00 0 fase43
- d1d8e18c-bc62-477a-9864-9b510c7fe41d org-sipro meta 7eeadd04-aaf1-434a-9014-69923983c1f1 2026-09-04 1450000 12000 260 3 IDR cluster-a-meta 23851000000001 manual seed 2026-09-05T19:55:50.605060+00:00 seed 2026-09-05T19:55:50.605060+00:00 0 fase43
